# 城院帮项目计划G04

Schedule from MS Project, 2026-10-08 to 2027-01-06, costs in ¥.

## Calendars

- G04课程排期日历: Mon-Fri 09:00-13:00, 14:00-18:00; Sat-Sun off. Exceptions (off unless hours are given): 2027-01-01.

## Resources

| Resource | Rate |
| --- | --- |
| 王晨 | 45.76 |
| 刘景浩 | 45.76 |

## Schedule

| ID | WBS | Task | Duration | Start | Finish | Predecessors | Total slack | Constraint | Deadline | Resources | Work | Cost | Text1 | Text2 |
| --- | --- | --- | --- | --- | --- | --- | --- | --- | --- | --- | --- | --- | --- | --- |
| 1 | 1 | **1 项目计划与评审** | 6d | 2026-10-08 09:00 | 2026-10-15 18:00 |  | 0d |  |  |  | 6h | 274.56 | 按下级分配 | 6人时 |
| 2 | 1.1 | **1.1 任务分解、排期与资源预算** | 1d | 2026-10-08 09:00 | 2026-10-08 18:00 |  | 0d |  |  |  | 2h | 91.52 | 王晨、刘景浩 | 2人时 |
| 3 | 1.1.1 | 1.1.1 确认WBS、依赖与提交边界 | 0.5d | 2026-10-08 09:00 | 2026-10-08 13:00 |  | 0d | start no earlier than 2026-10-08 09:00 |  | 王晨 [12.5%]; 刘景浩 [12.5%] | 1h | 45.76 | 王晨、刘景浩 | 1人时 |
| 4 | 1.1.2 | 1.1.2 建立资源预算与风险安排 | 0.5d | 2026-10-08 14:00 | 2026-10-08 18:00 | 3 | 0d | start no earlier than 2026-10-08 14:00 |  | 王晨 [12.5%]; 刘景浩 [12.5%] | 1h | 45.76 | 王晨、刘景浩 | 1人时 |
| 5 | 1.2 | **1.2 项目计划内部复核与汇报材料** | 1d | 2026-10-09 09:00 | 2026-10-09 18:00 |  | 0d |  |  |  | 2h | 91.52 | 王晨、刘景浩 | 2人时 |
| 6 | 1.2.1 | 1.2.1 逐条检查评审要求与计划 | 0.5d | 2026-10-09 09:00 | 2026-10-09 13:00 | 4 | 0d | start no earlier than 2026-10-09 09:00 |  | 王晨 [12.5%]; 刘景浩 [12.5%] | 1h | 45.76 | 王晨、刘景浩 | 1人时 |
| 7 | 1.2.2 | 1.2.2 确认汇报材料与提交清单 | 0.5d | 2026-10-09 14:00 | 2026-10-09 18:00 | 6 | 0d | start no earlier than 2026-10-09 14:00 |  | 王晨 [12.5%]; 刘景浩 [12.5%] | 1h | 45.76 | 王晨、刘景浩 | 1人时 |
| 8 | 1.3 | **1.3 项目计划评审反馈与修订** | 1d | 2026-10-15 09:00 | 2026-10-15 18:00 |  | 0d |  |  |  | 2h | 91.52 | 王晨、刘景浩 | 2人时 |
| 9 | 1.3.1 | 1.3.1 登记课堂计划意见与影响 | 0.5d | 2026-10-15 09:00 | 2026-10-15 13:00 | 7 | 0d | start no earlier than 2026-10-15 09:00 |  | 王晨 [12.5%]; 刘景浩 [12.5%] | 1h | 45.76 | 王晨、刘景浩 | 1人时 |
| 10 | 1.3.2 | 1.3.2 共同修订排期与计划基线 | 0.5d | 2026-10-15 14:00 | 2026-10-15 18:00 | 9 | 0d | start no earlier than 2026-10-15 14:00 | 2026-10-15 18:00 | 王晨 [12.5%]; 刘景浩 [12.5%] | 1h | 45.76 | 王晨、刘景浩 | 1人时 |
| 11 | 2 | **2 可行性研究** | 6d | 2026-10-08 09:00 | 2026-10-15 18:00 |  | 0d |  |  |  | 10h | 457.6 | 按下级分配 | 10人时 |
| 12 | 2.1 | **2.1 关键技术与工具可行性验证** | 3d | 2026-10-08 09:00 | 2026-10-12 18:00 |  | 0d |  |  |  | 4.5h | 205.92 | 王晨 | 4.5人时 |
| 13 | 2.1.1 | **2.1.1 验证双端构建与邮箱条件** | 1d | 2026-10-08 09:00 | 2026-10-08 18:00 |  | 0d | start no earlier than 2026-10-08 09:00 |  |  | 2.25h | 102.96 | 王晨 | 2.25人时 |
| 14 | 2.1.1.1 | **2.1.1.1 FS01 复查系统规模和目标** | 0.5d | 2026-10-08 09:00 | 2026-10-08 13:00 |  | 0d | start no earlier than 2026-10-08 09:00 |  |  | 1h | 45.76 | 王晨 | 1人时 |
| 15 | 2.1.1.1.1 | 2.1.1.1.1 FS01.1 明确使用者 | 0.1d | 2026-10-08 09:00 | 2026-10-08 09:48 |  | 0d | start no earlier than 2026-10-08 09:00 |  | 王晨 [25%] | 0.2h | 9.15 | 王晨 | 0.2人时 |
| 16 | 2.1.1.1.2 | 2.1.1.1.2 FS01.2 限定业务边界 | 0.1d | 2026-10-08 09:48 | 2026-10-08 10:36 | 15 | 0d | start no earlier than 2026-10-08 09:48 |  | 王晨 [25%] | 0.2h | 9.15 | 王晨 | 0.2人时 |
| 17 | 2.1.1.1.3 | 2.1.1.1.3 FS01.3 划分访问权限 | 0.1d | 2026-10-08 10:36 | 2026-10-08 11:24 | 16 | 0d | start no earlier than 2026-10-08 10:36 |  | 王晨 [25%] | 0.2h | 9.15 | 王晨 | 0.2人时 |
| 18 | 2.1.1.1.4 | 2.1.1.1.4 FS01.4 把目标写成检查项 | 0.1d | 2026-10-08 11:24 | 2026-10-08 12:12 | 17 | 0d | start no earlier than 2026-10-08 11:24 |  | 王晨 [25%] | 0.2h | 9.15 | 王晨 | 0.2人时 |
| 19 | 2.1.1.1.5 | 2.1.1.1.5 FS01.5 核对规模和约束 | 0.1d | 2026-10-08 12:12 | 2026-10-08 13:00 | 18 | 0d | start no earlier than 2026-10-08 12:12 |  | 王晨 [25%] | 0.2h | 9.15 | 王晨 | 0.2人时 |
| 20 | 2.1.1.2 | **2.1.1.2 FS02 研究目前正在使用的系统** | 0.5d | 2026-10-08 14:00 | 2026-10-08 18:00 | 14 | 0d | start no earlier than 2026-10-08 14:00 |  |  | 1.25h | 57.2 | 王晨 | 1.25人时 |
| 21 | 2.1.1.2.1 | 2.1.1.2.1 FS02.1 列出当前渠道 | 0.1d | 2026-10-08 14:00 | 2026-10-08 14:48 | 14 | 0d | start no earlier than 2026-10-08 14:00 |  | 王晨 [31.2%] | 0.25h | 11.44 | 王晨 | 0.25人时 |
| 22 | 2.1.1.2.2 | 2.1.1.2.2 FS02.2 保留已有有效能力 | 0.1d | 2026-10-08 14:48 | 2026-10-08 15:36 | 21 | 0d | start no earlier than 2026-10-08 14:48 |  | 王晨 [31.2%] | 0.25h | 11.44 | 王晨 | 0.25人时 |
| 23 | 2.1.1.2.3 | 2.1.1.2.3 FS02.3 还原当前处理步骤 | 0.1d | 2026-10-08 15:36 | 2026-10-08 16:24 | 22 | 0d | start no earlier than 2026-10-08 15:36 |  | 王晨 [31.2%] | 0.25h | 11.44 | 王晨 | 0.25人时 |
| 24 | 2.1.1.2.4 | 2.1.1.2.4 FS02.4 定位信息断点 | 0.1d | 2026-10-08 16:24 | 2026-10-08 17:12 | 23 | 0d | start no earlier than 2026-10-08 16:24 |  | 王晨 [31.2%] | 0.25h | 11.44 | 王晨 | 0.25人时 |
| 25 | 2.1.1.2.5 | 2.1.1.2.5 FS02.5 把不足变成改进输入 | 0.1d | 2026-10-08 17:12 | 2026-10-08 18:00 | 24 | 0d | start no earlier than 2026-10-08 17:12 |  | 王晨 [31.2%] | 0.25h | 11.44 | 王晨 | 0.25人时 |

Notes:
- 1: 任务负责人：按下级分配；计划人时：6.0；汇总不重复计费
- 2: 任务负责人：王晨、刘景浩；计划人时：2.0；每项任务写明负责人、计划人时、前置、产物与人工预算；管理活动单列
- 3: 任务负责人：王晨、刘景浩；计划人时：1.0；每项任务写明负责人、计划人时、前置、产物与人工预算；管理活动单列
- 4: 任务负责人：王晨、刘景浩；计划人时：1.0；每项任务写明负责人、计划人时、前置、产物与人工预算；管理活动单列
- 5: 任务负责人：王晨、刘景浩；计划人时：2.0；16项要求有材料位置；图表、分工和提交节点一致
- 6: 任务负责人：王晨、刘景浩；计划人时：1.0；16项要求有材料位置；图表、分工和提交节点一致
- 7: 任务负责人：王晨、刘景浩；计划人时：1.0；16项要求有材料位置；图表、分工和提交节点一致
- 8: 任务负责人：王晨、刘景浩；计划人时：2.0；逐项记录处理人、修改内容和复核结果；未关闭问题有期限
- 9: 任务负责人：王晨、刘景浩；计划人时：1.0；逐项记录处理人、修改内容和复核结果；未关闭问题有期限
- 10: 任务负责人：王晨、刘景浩；计划人时：1.0；逐项记录处理人、修改内容和复核结果；未关闭问题有期限
- 11: 任务负责人：按下级分配；计划人时：10.0；汇总不重复计费
- 12: 任务负责人：王晨；计划人时：4.5；真实发信、编译、权限和恢复条件有验证记录；失败说明替代措施
- 13: 任务负责人：王晨；计划人时：2.25；真实发信、编译、权限和恢复条件有验证记录；失败说明替代措施
- 14: 任务负责人：王晨；计划人时：1.0；产物：；完成标准：输出：用户权限表、范围清单、目标与约束。完成标准：每项目标能找到需求和验收场景，范围外功能明确列出。；实际完成按工作日志登记
- 15: 任务负责人：王晨；计划人时：0.2；产物：主要读者是已明确目标岗位、准备投递和面试的校内学生；分享者是认证用户，重点邀请有实习或工作经历者。；完成标准：输出：用户权限表、范围清单、目标与约束。完成标准：每项目标能找到需求和验收场景，范围外功能明确列出。；实际完成按工作日志登记
- 16: 任务负责人：王晨；计划人时：0.2；产物：本期提供经验文章、评论、非现金认可、自愿站外联系、社区治理和独立运维；不建立咨询订单、现金交易和站内即时通信。；完成标准：输出：用户权限表、范围清单、目标与约束。完成标准：每项目标能找到需求和验收场景，范围外功能明确列出。；实际完成按工作日志登记
- 17: 任务负责人：王晨；计划人时：0.2；产物：未登录和未认证者阅读公开文章；作者主页、评论、联系方式与互动要求校园认证；社区管理与运维权限分别授予。；完成标准：输出：用户权限表、范围清单、目标与约束。完成标准：每项目标能找到需求和验收场景，范围外功能明确列出。；实际完成按工作日志登记
- 18: 任务负责人：王晨；计划人时：0.2；产物：按岗位检索，并组合公司、经历专业筛选；同一账号跨端使用；重复投币请求不重复记账；管理人员能定位举报对象。；完成标准：输出：用户权限表、范围清单、目标与约束。完成标准：每项目标能找到需求和验收场景，范围外功能明确列出。；实际完成按工作日志登记
- 19: 任务负责人：王晨；计划人时：0.2；产物：按52项功能标识管理，其中50项本期、2项未来；12项非功能要求。两名成员，课堂本机演示，226.55人时控制额。；完成标准：输出：用户权限表、范围清单、目标与约束。完成标准：每项目标能找到需求和验收场景，范围外功能明确列出。；实际完成按工作日志登记
- 20: 任务负责人：王晨；计划人时：1.25；产物：；完成标准：输出：现状流程和问题改进对应表。完成标准：每个改进点有具体信息断点，已有渠道中可复用的能力得到保留。；实际完成按工作日志登记
- 21: 任务负责人：王晨；计划人时：0.25；产物：招聘网站提供职位与公司入口；内容平台提供经验；群聊和个人联系用于补充；文档、收藏及网盘保存资料。；完成标准：输出：现状流程和问题改进对应表。完成标准：每个改进点有具体信息断点，已有渠道中可复用的能力得到保留。；实际完成按工作日志登记
- 22: 任务负责人：王晨；计划人时：0.25；产物：保留招聘网站查岗位和外部资料链接；平台不重复建设企业招聘系统、网盘和社交通信服务。；完成标准：输出：现状流程和问题改进对应表。完成标准：每个改进点有具体信息断点，已有渠道中可复用的能力得到保留。；实际完成按工作日志登记
- 23: 任务负责人：王晨；计划人时：0.25；产物：先看岗位要求，再检索经验、人工判断适用性、分别收藏，剩余问题另找人询问。下图展示数据经过哪些载体。；完成标准：输出：现状流程和问题改进对应表。完成标准：每个改进点有具体信息断点，已有渠道中可复用的能力得到保留。；实际完成按工作日志登记
- 24: 任务负责人：王晨；计划人时：0.25；产物：经历起点难比较；同专业和同岗位信息分散；评论答复难持续复用；公开联系意愿不清楚。；完成标准：输出：现状流程和问题改进对应表。完成标准：每个改进点有具体信息断点，已有渠道中可复用的能力得到保留。；实际完成按工作日志登记
- 25: 任务负责人：王晨；计划人时：0.25；产物：增加经历背景、岗位与专业筛选、稳定文章链接及评论上下文；联系由作者开关控制。后续走查核对实际使用效果。；完成标准：输出：现状流程和问题改进对应表。完成标准：每个改进点有具体信息断点，已有渠道中可复用的能力得到保留。；实际完成按工作日志登记

| ID | WBS | Task | Duration | Start | Finish | Predecessors | Total slack | Constraint | Resources | Work | Cost | Text1 | Text2 |
| --- | --- | --- | --- | --- | --- | --- | --- | --- | --- | --- | --- | --- | --- |
| 26 | 2.1.2 | **2.1.2 核查独立运维、存储与恢复路径** | 2d | 2026-10-09 09:00 | 2026-10-12 18:00 | 13 | 0d | start no earlier than 2026-10-09 09:00 |  | 2.25h | 102.96 | 王晨 | 2.25人时 |
| 27 | 2.1.2.1 | **2.1.2.1 FS03 导出新系统的高层逻辑模型** | 1d | 2026-10-09 09:00 | 2026-10-09 18:00 | 20 | 0d | start no earlier than 2026-10-09 09:00 |  | 1.25h | 57.2 | 王晨 | 1.25人时 |
| 28 | 2.1.2.1.1 | 2.1.2.1.1 FS03.1 抽去现状工具名称 | 0.2d | 2026-10-09 09:00 | 2026-10-09 10:36 | 20 | 0d | start no earlier than 2026-10-09 09:00 | 王晨 [15.6%] | 0.25h | 11.44 | 王晨 | 0.25人时 |
| 29 | 2.1.2.1.2 | 2.1.2.1.2 FS03.2 定义系统边界 | 0.16d | 2026-10-09 10:36 | 2026-10-09 11:53 | 28 | 0d | start no earlier than 2026-10-09 10:36 | 王晨 [15.6%] | 0.2h | 9.15 | 王晨 | 0.2人时 |
| 30 | 2.1.2.1.3 | 2.1.2.1.3 FS03.3 明确输入与输出 | 0.16d | 2026-10-09 11:53 | 2026-10-09 14:10 | 29 | 0d | start no earlier than 2026-10-09 11:53 | 王晨 [15.6%] | 0.2h | 9.15 | 王晨 | 0.2人时 |
| 31 | 2.1.2.1.4 | 2.1.2.1.4 FS03.4 分解主要逻辑处理 | 0.16d | 2026-10-09 14:10 | 2026-10-09 15:27 | 30 | 0d | start no earlier than 2026-10-09 14:10 | 王晨 [15.6%] | 0.2h | 9.15 | 王晨 | 0.2人时 |
| 32 | 2.1.2.1.5 | 2.1.2.1.5 FS03.5 建立字典并检查平衡 | 0.16d | 2026-10-09 15:27 | 2026-10-09 16:44 | 31 | 0d | start no earlier than 2026-10-09 15:27 | 王晨 [15.6%] | 0.2h | 9.15 | 王晨 | 0.2人时 |
| 33 | 2.1.2.1.6 | 2.1.2.1.6 FS03.6 推导目标物理实现 | 0.16d | 2026-10-09 16:44 | 2026-10-09 18:00 | 32 | 0d | start no earlier than 2026-10-09 16:44 | 王晨 [15.8%] | 0.2h | 9.15 | 王晨 | 0.2人时 |
| 34 | 2.1.2.2 | **2.1.2.2 FS04 进一步定义问题** | 1d | 2026-10-12 09:00 | 2026-10-12 18:00 | 27 | 0d | start no earlier than 2026-10-12 09:00 |  | 1h | 45.76 | 王晨 | 1人时 |
| 35 | 2.1.2.2.1 | 2.1.2.2.1 FS04.1 重写核心问题 | 0.2d | 2026-10-12 09:00 | 2026-10-12 10:36 | 27 | 0d | start no earlier than 2026-10-12 09:00 | 王晨 [12.5%] | 0.2h | 9.15 | 王晨 | 0.2人时 |
| 36 | 2.1.2.2.2 | 2.1.2.2.2 FS04.2 拆开问题与解决手段 | 0.2d | 2026-10-12 10:36 | 2026-10-12 12:12 | 35 | 0d | start no earlier than 2026-10-12 10:36 | 王晨 [12.5%] | 0.2h | 9.15 | 王晨 | 0.2人时 |
| 37 | 2.1.2.2.3 | 2.1.2.2.3 FS04.3 收紧本期范围 | 0.2d | 2026-10-12 12:12 | 2026-10-12 14:48 | 36 | 0d | start no earlier than 2026-10-12 12:12 | 王晨 [12.5%] | 0.2h | 9.15 | 王晨 | 0.2人时 |
| 38 | 2.1.2.2.4 | 2.1.2.2.4 FS04.4 补充反例和限制 | 0.2d | 2026-10-12 14:48 | 2026-10-12 16:24 | 37 | 0d | start no earlier than 2026-10-12 14:48 | 王晨 [12.5%] | 0.2h | 9.15 | 王晨 | 0.2人时 |
| 39 | 2.1.2.2.5 | 2.1.2.2.5 FS04.5 形成反馈和关闭方式 | 0.2d | 2026-10-12 16:24 | 2026-10-12 18:00 | 38 | 0d | start no earlier than 2026-10-12 16:24 | 王晨 [12.5%] | 0.2h | 9.15 | 王晨 | 0.2人时 |
| 40 | 2.2 | **2.2 经济、操作及内容供给分析** | 2d | 2026-10-12 09:00 | 2026-10-13 18:00 |  | 0d |  |  | 2.5h | 114.4 | 刘景浩 | 2.5人时 |
| 41 | 2.2.1 | **2.2.1 核查工具、设备与现金费用** | 1d | 2026-10-12 09:00 | 2026-10-12 18:00 | 7 | 0d | start no earlier than 2026-10-12 09:00 |  | 1.25h | 57.2 | 刘景浩 | 1.25人时 |
| 42 | 2.2.1.1 | **2.2.1.1 FS05 导出和评价供选择的解法** | 1d | 2026-10-12 09:00 | 2026-10-12 18:00 | 27 | 0d | start no earlier than 2026-10-12 09:00 |  | 1.25h | 57.2 | 刘景浩 | 1.25人时 |
| 43 | 2.2.1.1.1 | 2.2.1.1.1 FS05.1 形成六类解法 | 0.2d | 2026-10-12 09:00 | 2026-10-12 10:36 | 27 | 0d | start no earlier than 2026-10-12 09:00 | 刘景浩 [15.6%] | 0.25h | 11.44 | 刘景浩 | 0.25人时 |
| 44 | 2.2.1.1.2 | 2.2.1.1.2 FS05.2 使用同一评价基准 | 0.16d | 2026-10-12 10:36 | 2026-10-12 11:53 | 43 | 0d | start no earlier than 2026-10-12 10:36 | 刘景浩 [15.6%] | 0.2h | 9.15 | 刘景浩 | 0.2人时 |
| 45 | 2.2.1.1.3 | 2.2.1.1.3 FS05.3 逐项比较小程序与App | 0.16d | 2026-10-12 11:53 | 2026-10-12 14:10 | 44 | 0d | start no earlier than 2026-10-12 11:53 | 刘景浩 [15.6%] | 0.2h | 9.15 | 刘景浩 | 0.2人时 |
| 46 | 2.2.1.1.4 | 2.2.1.1.4 FS05.4 评估成员与工具能力 | 0.16d | 2026-10-12 14:10 | 2026-10-12 15:27 | 45 | 0d | start no earlier than 2026-10-12 14:10 | 刘景浩 [15.6%] | 0.2h | 9.15 | 刘景浩 | 0.2人时 |
| 47 | 2.2.1.1.5 | 2.2.1.1.5 FS05.5 换算工作量和人工成本 | 0.16d | 2026-10-12 15:27 | 2026-10-12 16:44 | 46 | 0d | start no earlier than 2026-10-12 15:27 | 刘景浩 [15.6%] | 0.2h | 9.15 | 刘景浩 | 0.2人时 |
| 48 | 2.2.1.1.6 | 2.2.1.1.6 FS05.6 计算并解释评分 | 0.16d | 2026-10-12 16:44 | 2026-10-12 18:00 | 47 | 0d | start no earlier than 2026-10-12 16:44 | 刘景浩 [15.8%] | 0.2h | 9.15 | 刘景浩 | 0.2人时 |
| 49 | 2.2.2 | **2.2.2 分析资料来源、作者邀请与操作成本** | 1d | 2026-10-13 09:00 | 2026-10-13 18:00 | 41 | 0d | start no earlier than 2026-10-13 09:00 |  | 1.25h | 57.2 | 刘景浩 | 1.25人时 |
| 50 | 2.2.2.1 | **2.2.2.1 FS06 推荐行动方针** | 1d | 2026-10-13 09:00 | 2026-10-13 18:00 | 34, 42 | 0d | start no earlier than 2026-10-13 09:00 |  | 1.25h | 57.2 | 刘景浩 | 1.25人时 |
| 51 | 2.2.2.1.1 | 2.2.2.1.1 FS06.1 明确继续与否 | 0.2d | 2026-10-13 09:00 | 2026-10-13 10:36 | 34, 42 | 0d | start no earlier than 2026-10-13 09:00 | 刘景浩 [15.6%] | 0.25h | 11.44 | 刘景浩 | 0.25人时 |
| 52 | 2.2.2.1.2 | 2.2.2.1.2 FS06.2 给出推荐理由 | 0.2d | 2026-10-13 10:36 | 2026-10-13 12:12 | 51 | 0d | start no earlier than 2026-10-13 10:36 | 刘景浩 [15.6%] | 0.25h | 11.44 | 刘景浩 | 0.25人时 |
| 53 | 2.2.2.1.3 | 2.2.2.1.3 FS06.3 说明备选方针 | 0.2d | 2026-10-13 12:12 | 2026-10-13 14:48 | 52 | 0d | start no earlier than 2026-10-13 12:12 | 刘景浩 [15.6%] | 0.25h | 11.44 | 刘景浩 | 0.25人时 |
| 54 | 2.2.2.1.4 | 2.2.2.1.4 FS06.4 定义继续条件 | 0.2d | 2026-10-13 14:48 | 2026-10-13 16:24 | 53 | 0d | start no earlier than 2026-10-13 14:48 | 刘景浩 [15.6%] | 0.25h | 11.44 | 刘景浩 | 0.25人时 |
| 55 | 2.2.2.1.5 | 2.2.2.1.5 FS06.5 定义调整触发点 | 0.2d | 2026-10-13 16:24 | 2026-10-13 18:00 | 54 | 0d | start no earlier than 2026-10-13 16:24 | 刘景浩 [15.6%] | 0.25h | 11.44 | 刘景浩 | 0.25人时 |

Notes:
- 26: 任务负责人：王晨；计划人时：2.25；真实发信、编译、权限和恢复条件有验证记录；失败说明替代措施
- 27: 任务负责人：王晨；计划人时：1.25；产物：；完成标准：输出：推导图、系统流程图、上下文DFD、处理/存储表和字典。完成标准：物理载体图与逻辑数据流图用途分明，编号与需求模型一致。；实际完成按工作日志登记
- 28: 任务负责人：王晨；计划人时：0.25；产物：将网站、群聊、网盘等物理载体抽象为信息检索、适用性比较、经验保存和问题补充。；完成标准：输出：推导图、系统流程图、上下文DFD、处理/存储表和字典。完成标准：物理载体图与逻辑数据流图用途分明，编号与需求模型一致。；实际完成按工作日志登记
- 29: 任务负责人：王晨；计划人时：0.2；产物：外部实体E1用户、E2社区管理员、E3运维管理员、E4邮件服务、E5受控运行环境；系统为P0。；完成标准：输出：推导图、系统流程图、上下文DFD、处理/存储表和字典。完成标准：物理载体图与逻辑数据流图用途分明，编号与需求模型一致。；实际完成按工作日志登记
- 30: 任务负责人：王晨；计划人时：0.2；产物：以F01F10记录用户、治理、运维、邮件和执行请求及结果，逐一给出方向、名称及数据组成。；完成标准：输出：推导图、系统流程图、上下文DFD、处理/存储表和字典。完成标准：物理载体图与逻辑数据流图用途分明，编号与需求模型一致。；实际完成按工作日志登记
- 31: 任务负责人：王晨；计划人时：0.2；产物：P1身份与权限、P2经验内容、P3交流与激励、P4社区治理、P5独立运维；分别关联D1D6逻辑存储。；完成标准：输出：推导图、系统流程图、上下文DFD、处理/存储表和字典。完成标准：物理载体图与逻辑数据流图用途分明，编号与需求模型一致。；实际完成按工作日志登记
- 32: 任务负责人：王晨；计划人时：0.2；产物：父层外部输入输出在下层分配，名称与结构可追踪；原子字段、组合结构和语义约束分别定义。；完成标准：输出：推导图、系统流程图、上下文DFD、处理/存储表和字典。完成标准：物理载体图与逻辑数据流图用途分明，编号与需求模型一致。；实际完成按工作日志登记
- 33: 任务负责人：王晨；计划人时：0.2；产物：在逻辑模型稳定后选择微信原生小程序与独立Vue网页、共享Java服务、MySQL、文件和独立运维执行器。系统流程图与DFD分开绘制。；完成标准：输出：推导图、系统流程图、上下文DFD、处理/存储表和字典。完成标准：物理载体图与逻辑数据流图用途分明，编号与需求模型一致。；实际完成按工作日志登记
- 34: 任务负责人：王晨；计划人时：1.0；产物：；完成标准：输出：修订后的问题陈述、范围和追踪链。完成标准：目标能够通过结果判断；未把实现方式写成用户问题。；实际完成按工作日志登记
- 35: 任务负责人：王晨；计划人时：0.2；产物：准备投递和面试的学生难以快速找到与目标岗位、专业和基础相近的亲历经验，并继续围绕内容交流。；完成标准：输出：修订后的问题陈述、范围和追踪链。完成标准：目标能够通过结果判断；未把实现方式写成用户问题。；实际完成按工作日志登记
- 36: 任务负责人：王晨；计划人时：0.2；产物：问题是经验适用性、可检索和可复用性；小程序投币是候选手段，不能直接代替问题描述。；完成标准：输出：修订后的问题陈述、范围和追踪链。完成标准：目标能够通过结果判断；未把实现方式写成用户问题。；实际完成按工作日志登记
- 37: 任务负责人：王晨；计划人时：0.2；产物：招聘投递、咨询担保、付费阅读、考研考公、校园跑腿不纳入；毕业材料认证和微信绑定转后续需求。；完成标准：输出：修订后的问题陈述、范围和追踪链。完成标准：目标能够通过结果判断；未把实现方式写成用户问题。；实际完成按工作日志登记
- 38: 任务负责人：王晨；计划人时：0.2；产物：同专业筛选依据作者分享经历对应的专业；公开邮箱不出现；作者关闭联系入口后不再提供联系方式。；完成标准：输出：修订后的问题陈述、范围和追踪链。完成标准：目标能够通过结果判断；未把实现方式写成用户问题。；实际完成按工作日志登记
- 39: 任务负责人：王晨；计划人时：0.2；产物：范围、权限或用户目标有冲突时回到FS01FS03；变更进入需求参数与决定表，经双方评审后更新基准。；完成标准：输出：修订后的问题陈述、范围和追踪链。完成标准：目标能够通过结果判断；未把实现方式写成用户问题。；实际完成按工作日志登记
- 40: 任务负责人：刘景浩；计划人时：2.5；现有资源与新增费用分别列出；演示资料可追溯；不虚构访谈和作者承诺
- 41: 任务负责人：刘景浩；计划人时：1.25；现有资源与新增费用分别列出；演示资料可追溯；不虚构访谈和作者承诺
- 42: 任务负责人：刘景浩；计划人时：1.25；产物：；完成标准：输出：候选方案表、优缺点、量化评分和成本区间。完成标准：至少两个可比较方案；推荐理由能追溯到共同标准。；实际完成按工作日志登记
- 43: 任务负责人：刘景浩；计划人时：0.25；产物：A 微信原生小程序＋独立Vue网页；B原生微信小程序＋独立网页；C响应式网页；D跨平台App＋网页；E原生双移动端＋网页；F现有工具组合。；完成标准：输出：候选方案表、优缺点、量化评分和成本区间。完成标准：至少两个可比较方案；推荐理由能追溯到共同标准。；实际完成按工作日志登记
- 44: 任务负责人：刘景浩；计划人时：0.2；产物：按需求覆盖25%、接触便利20%、团队能力20%、周期成本20%、维护扩展15%比较，不为某一解法单独改变范围。；完成标准：输出：候选方案表、优缺点、量化评分和成本区间。完成标准：至少两个可比较方案；推荐理由能追溯到共同标准。；实际完成按工作日志登记
- 45: 任务负责人：刘景浩；计划人时：0.2；产物：比较进入方式、移动创作、审核发布、设备能力、维护量和双端复用；网页补充桌面长文创作。；完成标准：输出：候选方案表、优缺点、量化评分和成本区间。完成标准：至少两个可比较方案；推荐理由能追溯到共同标准。；实际完成按工作日志登记
- 46: 任务负责人：刘景浩；计划人时：0.2；产物：两人协作；WorkBuddy承担前端辅助，Codex/GPT辅助后端；学生负责需求、复核、测试及交付，AI生成不等于完成。；完成标准：输出：候选方案表、优缺点、量化评分和成本区间。完成标准：至少两个可比较方案；推荐理由能追溯到共同标准。；实际完成按工作日志登记
- 47: 任务负责人：刘景浩；计划人时：0.2；产物：A按226.55人时、45.76元/人时测算10366.93元；其他解法采用相同单价按工作量增减比较，详见第4章。；完成标准：输出：候选方案表、优缺点、量化评分和成本区间。完成标准：至少两个可比较方案；推荐理由能追溯到共同标准。；实际完成按工作日志登记
- 48: 任务负责人：刘景浩；计划人时：0.2；产物：A89、B78、C84、D66、E47、F72分。评分是本项目约束下的方案判断，附录D列出权重、原始分和理由。；完成标准：输出：候选方案表、优缺点、量化评分和成本区间。完成标准：至少两个可比较方案；推荐理由能追溯到共同标准。；实际完成按工作日志登记
- 49: 任务负责人：刘景浩；计划人时：1.25；现有资源与新增费用分别列出；演示资料可追溯；不虚构访谈和作者承诺
- 50: 任务负责人：刘景浩；计划人时：1.25；产物：；完成标准：输出：推荐结论、条件、备选和变更入口。完成标准：说明为何继续、选什么、在何种情况下调整。；实际完成按工作日志登记
- 51: 任务负责人：刘景浩；计划人时：0.25；产物：建议按限定范围继续推进需求和设计，以微信原生小程序＋独立Vue网页共享Java后端为推荐方案。；完成标准：输出：推荐结论、条件、备选和变更入口。完成标准：说明为何继续、选什么、在何种情况下调整。；实际完成按工作日志登记
- 52: 任务负责人：刘景浩；计划人时：0.25；产物：移动入口适合随时阅读和基础创作；网页适合Markdown长文；共享身份、内容和治理规则，减少重复实现。；完成标准：输出：推荐结论、条件、备选和变更入口。完成标准：说明为何继续、选什么、在何种情况下调整。；实际完成按工作日志登记
- 53: 任务负责人：刘景浩；计划人时：0.25；产物：若发布或双端投入显著超出控制额，保留响应式网页作为缩减方案；须经变更确认，不能直接替换交付范围。；完成标准：输出：推荐结论、条件、备选和变更入口。完成标准：说明为何继续、选什么、在何种情况下调整。；实际完成按工作日志登记
- 54: 任务负责人：刘景浩；计划人时：0.25；产物：需求模型与验收可追踪、跨端编辑不破坏正文、权限拒绝有效、投币一致性及受控恢复有可执行验证方案。；完成标准：输出：推荐结论、条件、备选和变更入口。完成标准：说明为何继续、选什么、在何种情况下调整。；实际完成按工作日志登记
- 55: 任务负责人：刘景浩；计划人时：0.25；产物：真实用户走查出现关键任务失败、邮箱链路不可用、核心资源超负荷、测试发现阻断风险时，组织评审并修订计划。；完成标准：输出：推荐结论、条件、备选和变更入口。完成标准：说明为何继续、选什么、在何种情况下调整。；实际完成按工作日志登记

| ID | WBS | Task | Duration | Start | Finish | Predecessors | Total slack | Constraint | Resources | Work | Cost | Text1 | Text2 |
| --- | --- | --- | --- | --- | --- | --- | --- | --- | --- | --- | --- | --- | --- |
| 56 | 2.3 | **2.3 可行性报告与内部评审** | 2d | 2026-10-14 09:00 | 2026-10-15 18:00 |  | 0d |  |  | 3h | 137.28 | 王晨、刘景浩 | 3人时 |
| 57 | 2.3.1 | **2.3.1 双方汇总技术与资源判断** | 1d | 2026-10-14 09:00 | 2026-10-14 18:00 | 26, 49 | 0d | start no earlier than 2026-10-14 09:00 |  | 1.5h | 68.64 | 王晨、刘景浩 | 1.5人时 |
| 58 | 2.3.1.1 | **2.3.1.1 FS07 草拟开发计划书** | 1d | 2026-10-14 09:00 | 2026-10-14 18:00 | 50 | 0d | start no earlier than 2026-10-14 09:00 |  | 1.5h | 68.64 | 王晨、刘景浩 | 1.5人时 |
| 59 | 2.3.1.1.1 | 2.3.1.1.1 FS07.1 分解交付工作 | 0.17d | 2026-10-14 09:00 | 2026-10-14 10:20 | 50 | 0d | start no earlier than 2026-10-14 09:00 | 王晨 [10%]; 刘景浩 [8.8%] | 0.25h | 11.44 | 王晨、刘景浩 | 0.25人时 |
| 60 | 2.3.1.1.2 | 2.3.1.1.2 FS07.2 估算人时与人员分配 | 0.17d | 2026-10-14 10:20 | 2026-10-14 11:40 | 59 | 0d | start no earlier than 2026-10-14 10:20 | 王晨 [10%]; 刘景浩 [8.8%] | 0.25h | 11.44 | 王晨、刘景浩 | 0.25人时 |
| 61 | 2.3.1.1.3 | 2.3.1.1.3 FS07.3 建立依赖与排期 | 0.17d | 2026-10-14 11:40 | 2026-10-14 13:00 | 60 | 0d | start no earlier than 2026-10-14 11:40 | 王晨 [10%]; 刘景浩 [8.8%] | 0.25h | 11.44 | 王晨、刘景浩 | 0.25人时 |
| 62 | 2.3.1.1.4 | 2.3.1.1.4 FS07.4 核算成本与资源 | 0.17d | 2026-10-14 14:00 | 2026-10-14 15:20 | 61 | 0d | start no earlier than 2026-10-14 14:00 | 王晨 [8.8%]; 刘景浩 [10%] | 0.25h | 11.44 | 王晨、刘景浩 | 0.25人时 |
| 63 | 2.3.1.1.5 | 2.3.1.1.5 FS07.5 细排下一需求阶段 | 0.17d | 2026-10-14 15:20 | 2026-10-14 16:40 | 62 | 0d | start no earlier than 2026-10-14 15:20 | 王晨 [8.8%]; 刘景浩 [10%] | 0.25h | 11.44 | 王晨、刘景浩 | 0.25人时 |
| 64 | 2.3.1.1.6 | 2.3.1.1.6 FS07.6 安排监督与调整 | 0.17d | 2026-10-14 16:40 | 2026-10-14 18:00 | 63 | 0d | start no earlier than 2026-10-14 16:40 | 王晨 [8.8%]; 刘景浩 [10%] | 0.25h | 11.44 | 王晨、刘景浩 | 0.25人时 |
| 65 | 2.3.2 | **2.3.2 共同评审可行性结论与条件** | 1d | 2026-10-15 09:00 | 2026-10-15 18:00 | 57 | 0d | start no earlier than 2026-10-15 09:00 |  | 1.5h | 68.64 | 王晨、刘景浩 | 1.5人时 |
| 66 | 2.3.2.1 | **2.3.2.1 FS08 写文档提交审查** | 1d | 2026-10-15 09:00 | 2026-10-15 18:00 | 58 | 0d | start no earlier than 2026-10-15 09:00 |  | 1.5h | 68.64 | 王晨、刘景浩 | 1.5人时 |
| 67 | 2.3.2.1.1 | 2.3.2.1.1 FS08.1 组织完整报告 | 0.17d | 2026-10-15 09:00 | 2026-10-15 10:20 | 58 | 0d | start no earlier than 2026-10-15 09:00 | 王晨 [10%]; 刘景浩 [8.8%] | 0.25h | 11.44 | 王晨、刘景浩 | 0.25人时 |
| 68 | 2.3.2.1.2 | 2.3.2.1.2 FS08.2 标记版本及输入 | 0.17d | 2026-10-15 10:20 | 2026-10-15 11:40 | 67 | 0d | start no earlier than 2026-10-15 10:20 | 王晨 [10%]; 刘景浩 [8.8%] | 0.25h | 11.44 | 王晨、刘景浩 | 0.25人时 |
| 69 | 2.3.2.1.3 | 2.3.2.1.3 FS08.3 核对图文一致 | 0.17d | 2026-10-15 11:40 | 2026-10-15 13:00 | 68 | 0d | start no earlier than 2026-10-15 11:40 | 王晨 [10%]; 刘景浩 [8.8%] | 0.25h | 11.44 | 王晨、刘景浩 | 0.25人时 |
| 70 | 2.3.2.1.4 | 2.3.2.1.4 FS08.4 编制审查索引 | 0.17d | 2026-10-15 14:00 | 2026-10-15 15:20 | 69 | 0d | start no earlier than 2026-10-15 14:00 | 王晨 [8.8%]; 刘景浩 [10%] | 0.25h | 11.44 | 王晨、刘景浩 | 0.25人时 |
| 71 | 2.3.2.1.5 | 2.3.2.1.5 FS08.5 区分记录与待办 | 0.17d | 2026-10-15 15:20 | 2026-10-15 16:40 | 70 | 0d | start no earlier than 2026-10-15 15:20 | 王晨 [8.8%]; 刘景浩 [10%] | 0.25h | 11.44 | 王晨、刘景浩 | 0.25人时 |
| 72 | 2.3.2.1.6 | 2.3.2.1.6 FS08.6 接收决定并闭环 | 0.17d | 2026-10-15 16:40 | 2026-10-15 18:00 | 71 | 0d | start no earlier than 2026-10-15 16:40 | 王晨 [8.8%]; 刘景浩 [10%] | 0.25h | 11.44 | 王晨、刘景浩 | 0.25人时 |
| 73 | 3 | **3 需求分析** | 14d | 2026-10-16 09:00 | 2026-11-04 18:00 |  | 0d |  |  | 37.6h | 1,720.58 | 按下级分配 | 37.6人时 |
| 74 | 3.1 | **3.1 用户场景、用例与权限边界** | 2d | 2026-10-16 09:00 | 2026-10-19 18:00 |  | 0d |  |  | 4h | 183.04 | 王晨、刘景浩 | 4人时 |
| 75 | 3.1.1 | **3.1.1 共同核对读者作者与管理场景** | 1d | 2026-10-16 09:00 | 2026-10-16 18:00 | 65 | 0d | start no earlier than 2026-10-16 09:00 |  | 2h | 91.52 | 王晨、刘景浩 | 2人时 |
| 76 | 3.1.1.1 | 3.1.1.1 RA01 确认用户类别与需求代表 | 0.5d | 2026-10-16 09:00 | 2026-10-16 13:00 | 65 | 0d | start no earlier than 2026-10-16 09:00 | 王晨 [12.5%]; 刘景浩 [12.5%] | 1h | 45.76 | 王晨、刘景浩 | 1人时 |
| 77 | 3.1.1.2 | 3.1.1.2 RA02 整理需求来源与情景 | 0.5d | 2026-10-16 14:00 | 2026-10-16 18:00 | 76 | 0d | start no earlier than 2026-10-16 14:00 | 王晨 [12.5%]; 刘景浩 [12.5%] | 1h | 45.76 | 王晨、刘景浩 | 1人时 |
| 78 | 3.1.2 | **3.1.2 确认权限矩阵与核心用例** | 1d | 2026-10-19 09:00 | 2026-10-19 18:00 | 75 | 0d | start no earlier than 2026-10-19 09:00 |  | 2h | 91.52 | 王晨、刘景浩 | 2人时 |
| 79 | 3.1.2.1 | 3.1.2.1 RA02 描述用例主流程与异常 | 0.5d | 2026-10-19 09:00 | 2026-10-19 13:00 | 75 | 0d | start no earlier than 2026-10-19 09:00 | 王晨 [12.5%]; 刘景浩 [12.5%] | 1h | 45.76 | 王晨、刘景浩 | 1人时 |
| 80 | 3.1.2.2 | 3.1.2.2 RA01 核对角色权限和边界 | 0.5d | 2026-10-19 14:00 | 2026-10-19 18:00 | 79 | 0d | start no earlier than 2026-10-19 14:00 | 王晨 [12.5%]; 刘景浩 [12.5%] | 1h | 45.76 | 王晨、刘景浩 | 1人时 |

Notes:
- 56: 任务负责人：王晨、刘景浩；计划人时：3.0；技术、经济、操作、进度及风险都有依据；高风险项明确验证和应对
- 57: 任务负责人：王晨、刘景浩；计划人时：1.5；技术、经济、操作、进度及风险都有依据；高风险项明确验证和应对
- 58: 任务负责人：王晨、刘景浩；计划人时：1.5；产物：；完成标准：输出：正式项目计划、WBS、周安排、甘特、网络、预算和测试安排。完成标准：同一任务在各文件中的责任、日期和人时一致。；实际完成按工作日志登记
- 59: 任务负责人：王晨、刘景浩；计划人时：0.25；产物：以8个工程工作域、52个工作包管理；工作包继续分到具体任务、负责人、起止日期、前置与完成标准。；完成标准：输出：正式项目计划、WBS、周安排、甘特、网络、预算和测试安排。完成标准：同一任务在各文件中的责任、日期和人时一致。；实际完成按工作日志登记
- 60: 任务负责人：王晨、刘景浩；计划人时：0.25；产物：项目226.55人时：王晨120.35、刘景浩106.20；开发、文档、管理和交叉复核均计入，不只计算编程。；完成标准：输出：正式项目计划、WBS、周安排、甘特、网络、预算和测试安排。完成标准：同一任务在各文件中的责任、日期和人时一致。；实际完成按工作日志登记
- 61: 任务负责人：王晨、刘景浩；计划人时：0.25；产物：使用原生Project维护依赖、阶段甘特和工程网络；总日历64个工作日，2027年1月6日收尾。；完成标准：输出：正式项目计划、WBS、周安排、甘特、网络、预算和测试安排。完成标准：同一任务在各文件中的责任、日期和人时一致。；实际完成按工作日志登记
- 62: 任务负责人：王晨、刘景浩；计划人时：0.25；产物：人工估算按45.76元/人时，总10366.93元；复用现有设备，不另列AI订阅。资源、风险和管理预留按计划管理。；完成标准：输出：正式项目计划、WBS、周安排、甘特、网络、预算和测试安排。完成标准：同一任务在各文件中的责任、日期和人时一致。；实际完成按工作日志登记
- 63: 任务负责人：王晨、刘景浩；计划人时：0.25；产物：3.6在10/2829完成范围与三模型；3.7在10/30完成字典及辅助图；3.8在11/2走查；3.9在11/3闭环材料。合计20人时。；完成标准：输出：正式项目计划、WBS、周安排、甘特、网络、预算和测试安排。完成标准：同一任务在各文件中的责任、日期和人时一致。；实际完成按工作日志登记
- 64: 任务负责人：王晨、刘景浩；计划人时：0.25；产物：组长周检查进度、风险和变更；双方评审交接、分支合并与测试证据；课堂意见在后续工作包处理。；完成标准：输出：正式项目计划、WBS、周安排、甘特、网络、预算和测试安排。完成标准：同一任务在各文件中的责任、日期和人时一致。；实际完成按工作日志登记
- 65: 任务负责人：王晨、刘景浩；计划人时：1.5；技术、经济、操作、进度及风险都有依据；高风险项明确验证和应对
- 66: 任务负责人：王晨、刘景浩；计划人时：1.5；产物：；完成标准：输出：可阅读、可追踪、可审查的资料包。完成标准：图表可辨认、页码可定位、关键结论有依据，实际审查决定另行留痕。；实际完成按工作日志登记
- 67: 任务负责人：王晨、刘景浩；计划人时：0.25；产物：保留GB/T 85672006可行性研究报告的正文结构，在第3.5节逐步展示八步；项目计划列在材料包前。；完成标准：输出：可阅读、可追踪、可审查的资料包。完成标准：图表可辨认、页码可定位、关键结论有依据，实际审查决定另行留痕。；实际完成按工作日志登记
- 68: 任务负责人：王晨、刘景浩；计划人时：0.25；产物：报告V1.4、G04-FAR-20261028-02；引用70页需求课件、58页可行性课件、评审表及现行计划和SRS。；完成标准：输出：可阅读、可追踪、可审查的资料包。完成标准：图表可辨认、页码可定位、关键结论有依据，实际审查决定另行留痕。；实际完成按工作日志登记
- 69: 任务负责人：王晨、刘景浩；计划人时：0.25；产物：检查P1P5、D1D6、F01F10、需求编号、当前预算及版本；三模型、字典和案例同用一套数据规则。；完成标准：输出：可阅读、可追踪、可审查的资料包。完成标准：图表可辨认、页码可定位、关键结论有依据，实际审查决定另行留痕。；实际完成按工作日志登记
- 70: 任务负责人：王晨、刘景浩；计划人时：0.25；产物：八步成果导航给出正文页码；课件主题给出图号；计划16项与需求11项评审分别列位置与材料。；完成标准：输出：可阅读、可追踪、可审查的资料包。完成标准：图表可辨认、页码可定位、关键结论有依据，实际审查决定另行留痕。；实际完成按工作日志登记
- 71: 任务负责人：王晨、刘景浩；计划人时：0.25；产物：历史会议和评分保留原日期；当前代表用户走查、需求周会和签认由实际参与者完成后填写。；完成标准：输出：可阅读、可追踪、可审查的资料包。完成标准：图表可辨认、页码可定位、关键结论有依据，实际审查决定另行留痕。；实际完成按工作日志登记
- 72: 任务负责人：王晨、刘景浩；计划人时：0.25；产物：评审意见进入问题单，注明负责人、修改文件、关闭证据和确认日期；影响范围、人时或日期时提交变更并同步计划。；完成标准：输出：可阅读、可追踪、可审查的资料包。完成标准：图表可辨认、页码可定位、关键结论有依据，实际审查决定另行留痕。；实际完成按工作日志登记
- 73: 任务负责人：按下级分配；计划人时：37.6；汇总不重复计费
- 74: 任务负责人：王晨、刘景浩；计划人时：4.0；游客、未认证、认证、社区和运维角色分开；普通账号不能访问管理数据
- 75: 任务负责人：王晨、刘景浩；计划人时：2.0；游客、未认证、认证、社区和运维角色分开；普通账号不能访问管理数据
- 76: 任务负责人：王晨、刘景浩；计划人时：1.0；产物：确认用户类别与需求代表的文档、图表或记录；完成标准：游客、未认证、认证、社区和运维角色分开；普通账号不能访问管理数据；实际完成按工作日志登记
- 77: 任务负责人：王晨、刘景浩；计划人时：1.0；产物：整理需求来源与情景的文档、图表或记录；完成标准：游客、未认证、认证、社区和运维角色分开；普通账号不能访问管理数据；实际完成按工作日志登记
- 78: 任务负责人：王晨、刘景浩；计划人时：2.0；游客、未认证、认证、社区和运维角色分开；普通账号不能访问管理数据
- 79: 任务负责人：王晨、刘景浩；计划人时：1.0；产物：描述用例主流程与异常的文档、图表或记录；完成标准：游客、未认证、认证、社区和运维角色分开；普通账号不能访问管理数据；实际完成按工作日志登记
- 80: 任务负责人：王晨、刘景浩；计划人时：1.0；产物：核对角色权限和边界的文档、图表或记录；完成标准：游客、未认证、认证、社区和运维角色分开；普通账号不能访问管理数据；实际完成按工作日志登记

| ID | WBS | Task | Duration | Start | Finish | Predecessors | Total slack | Constraint | Deadline | Resources | Work | Cost | Text1 | Text2 |
| --- | --- | --- | --- | --- | --- | --- | --- | --- | --- | --- | --- | --- | --- | --- |
| 81 | 3.2 | **3.2 功能、数据与非功能需求** | 2d | 2026-10-20 09:00 | 2026-10-21 18:00 |  | 0d |  |  |  | 3.2h | 146.43 | 王晨 | 3.2人时 |
| 82 | 3.2.1 | **3.2.1 细化文章交流、激励与治理规则** | 1d | 2026-10-20 09:00 | 2026-10-20 18:00 | 78 | 0d | start no earlier than 2026-10-20 09:00 |  |  | 1.6h | 73.22 | 王晨 | 1.6人时 |
| 83 | 3.2.1.1 | 3.2.1.1 RA01 拆分功能需求与本期范围 | 0.5d | 2026-10-20 09:00 | 2026-10-20 13:00 | 78 | 0d | start no earlier than 2026-10-20 09:00 |  | 王晨 [20%] | 0.8h | 36.61 | 王晨 | 0.8人时 |
| 84 | 3.2.1.2 | 3.2.1.2 RA01 明确互动激励与治理规则 | 0.5d | 2026-10-20 14:00 | 2026-10-20 18:00 | 83 | 0d | start no earlier than 2026-10-20 14:00 |  | 王晨 [20%] | 0.8h | 36.61 | 王晨 | 0.8人时 |
| 85 | 3.2.2 | **3.2.2 定义数据、异常与非功能验收** | 1d | 2026-10-21 09:00 | 2026-10-21 18:00 | 82 | 0d | start no earlier than 2026-10-21 09:00 |  |  | 1.6h | 73.22 | 王晨 | 1.6人时 |
| 86 | 3.2.2.1 | 3.2.2.1 RA01 定义数据和接口约束 | 0.31d | 2026-10-21 09:00 | 2026-10-21 11:30 | 82 | 0d | start no earlier than 2026-10-21 09:00 |  | 王晨 [20%] | 0.5h | 22.88 | 王晨 | 0.5人时 |
| 87 | 3.2.2.2 | 3.2.2.2 RA01 量化性能可靠性与安全指标 | 0.38d | 2026-10-21 11:30 | 2026-10-21 15:30 | 86 | 0d | start no earlier than 2026-10-21 11:30 |  | 王晨 [20%] | 0.6h | 27.46 | 王晨 | 0.6人时 |
| 88 | 3.2.2.3 | 3.2.2.3 RA10 定义异常和验收场景 | 0.31d | 2026-10-21 15:30 | 2026-10-21 18:00 | 87 | 0d | start no earlier than 2026-10-21 15:30 |  | 王晨 [20%] | 0.5h | 22.88 | 王晨 | 0.5人时 |
| 89 | 3.3 | **3.3 双端原型与场景核对** | 2d | 2026-10-20 09:00 | 2026-10-21 18:00 |  | 0d |  |  |  | 3.2h | 146.43 | 刘景浩 | 3.2人时 |
| 90 | 3.3.1 | **3.3.1 绘制双端阅读创作原型** | 1d | 2026-10-20 09:00 | 2026-10-20 18:00 | 78 | 0d | start no earlier than 2026-10-20 09:00 |  |  | 1.6h | 73.22 | 刘景浩 | 1.6人时 |
| 91 | 3.3.1.1 | 3.3.1.1 RA03 整理小程序阅读与作者界面 | 0.5d | 2026-10-20 09:00 | 2026-10-20 13:00 | 78 | 0d | start no earlier than 2026-10-20 09:00 |  | 刘景浩 [20%] | 0.8h | 36.61 | 刘景浩 | 0.8人时 |
| 92 | 3.3.1.2 | 3.3.1.2 RA03 整理网页创作与阅读线框 | 0.5d | 2026-10-20 14:00 | 2026-10-20 18:00 | 91 | 0d | start no earlier than 2026-10-20 14:00 |  | 刘景浩 [20%] | 0.8h | 36.61 | 刘景浩 | 0.8人时 |
| 93 | 3.3.2 | **3.3.2 核对社区和运维管理流程** | 1d | 2026-10-21 09:00 | 2026-10-21 18:00 | 90 | 0d | start no earlier than 2026-10-21 09:00 |  |  | 1.6h | 73.22 | 刘景浩 | 1.6人时 |
| 94 | 3.3.2.1 | 3.3.2.1 RA03 核对社区案件与关联定位 | 0.5d | 2026-10-21 09:00 | 2026-10-21 13:00 | 90 | 0d | start no earlier than 2026-10-21 09:00 |  | 刘景浩 [20%] | 0.8h | 36.61 | 刘景浩 | 0.8人时 |
| 95 | 3.3.2.2 | 3.3.2.2 RA03 核对独立运维与执行确认 | 0.5d | 2026-10-21 14:00 | 2026-10-21 18:00 | 94 | 0d | start no earlier than 2026-10-21 14:00 |  | 刘景浩 [20%] | 0.8h | 36.61 | 刘景浩 | 0.8人时 |
| 96 | 3.4 | **3.4 SRS基线与需求评审材料** | 2d | 2026-10-22 09:00 | 2026-10-23 18:00 |  | 0d |  |  |  | 4h | 183.04 | 王晨、刘景浩 | 4人时 |
| 97 | 3.4.1 | **3.4.1 共同汇总SRS与需求追踪** | 1d | 2026-10-22 09:00 | 2026-10-22 18:00 | 85, 93 | 0d | start no earlier than 2026-10-22 09:00 |  |  | 2h | 91.52 | 王晨、刘景浩 | 2人时 |
| 98 | 3.4.1.1 | 3.4.1.1 RA10 汇总功能非功能与SRS | 0.5d | 2026-10-22 09:00 | 2026-10-22 13:00 | 85, 93 | 0d | start no earlier than 2026-10-22 09:00 |  | 王晨 [12.5%]; 刘景浩 [12.5%] | 1h | 45.76 | 王晨、刘景浩 | 1人时 |
| 99 | 3.4.1.2 | 3.4.1.2 RA10 关联追踪编号与输入版本 | 0.5d | 2026-10-22 14:00 | 2026-10-22 18:00 | 98 | 0d | start no earlier than 2026-10-22 14:00 |  | 王晨 [12.5%]; 刘景浩 [12.5%] | 1h | 45.76 | 王晨、刘景浩 | 1人时 |
| 100 | 3.4.2 | **3.4.2 内部复核并准备需求汇报** | 1d | 2026-10-23 09:00 | 2026-10-23 18:00 | 97 | 0d | start no earlier than 2026-10-23 09:00 | 2026-10-23 18:00 |  | 2h | 91.52 | 王晨、刘景浩 | 2人时 |
| 101 | 3.4.2.1 | 3.4.2.1 RA10 组织内部需求评审 | 0.5d | 2026-10-23 09:00 | 2026-10-23 13:00 | 97 | 0d | start no earlier than 2026-10-23 09:00 |  | 王晨 [12.5%]; 刘景浩 [12.5%] | 1h | 45.76 | 王晨、刘景浩 | 1人时 |
| 102 | 3.4.2.2 | 3.4.2.2 RA10 核对汇报与提交清单 | 0.5d | 2026-10-23 14:00 | 2026-10-23 18:00 | 101 | 0d | start no earlier than 2026-10-23 14:00 |  | 王晨 [12.5%]; 刘景浩 [12.5%] | 1h | 45.76 | 王晨、刘景浩 | 1人时 |
| 103 | 3.5 | **3.5 需求课堂评审反馈处理** | 0.5d | 2026-11-04 14:00 | 2026-11-04 18:00 |  | 0d |  |  |  | 3.2h | 146.43 | 刘景浩 | 3.2人时 |
| 104 | 3.5.1 | **3.5.1 记录需求复审意见** | 0.25d | 2026-11-04 14:00 | 2026-11-04 16:00 | 141 | 0d | start no earlier than 2026-11-04 14:00 |  |  | 1.6h | 73.22 | 刘景浩 | 1.6人时 |
| 105 | 3.5.1.1 | 3.5.1.1 RA10 登记课堂评审问题 | 0.12d | 2026-11-04 14:00 | 2026-11-04 15:00 | 141 | 0d | start no earlier than 2026-11-04 14:00 |  | 刘景浩 [80%] | 0.8h | 36.61 | 刘景浩 | 0.8人时 |
| 106 | 3.5.1.2 | 3.5.1.2 RA10 分析范围接口和排期影响 | 0.12d | 2026-11-04 15:00 | 2026-11-04 16:00 | 105 | 0d | start no earlier than 2026-11-04 15:00 |  | 刘景浩 [80%] | 0.8h | 36.61 | 刘景浩 | 0.8人时 |

Notes:
- 81: 任务负责人：王晨；计划人时：3.2；REQ编号关联用例；认证资料、隐私、状态、冲突、币账本与恢复边界可验收
- 82: 任务负责人：王晨；计划人时：1.6；REQ编号关联用例；认证资料、隐私、状态、冲突、币账本与恢复边界可验收
- 83: 任务负责人：王晨；计划人时：0.8；产物：拆分功能需求与本期范围的文档、图表或记录；完成标准：REQ编号关联用例；认证资料、隐私、状态、冲突、币账本与恢复边界可验收；实际完成按工作日志登记
- 84: 任务负责人：王晨；计划人时：0.8；产物：明确互动激励与治理规则的文档、图表或记录；完成标准：REQ编号关联用例；认证资料、隐私、状态、冲突、币账本与恢复边界可验收；实际完成按工作日志登记
- 85: 任务负责人：王晨；计划人时：1.6；REQ编号关联用例；认证资料、隐私、状态、冲突、币账本与恢复边界可验收
- 86: 任务负责人：王晨；计划人时：0.5；产物：定义数据和接口约束的文档、图表或记录；完成标准：REQ编号关联用例；认证资料、隐私、状态、冲突、币账本与恢复边界可验收；实际完成按工作日志登记
- 87: 任务负责人：王晨；计划人时：0.6；产物：量化性能可靠性与安全指标的文档、图表或记录；完成标准：REQ编号关联用例；认证资料、隐私、状态、冲突、币账本与恢复边界可验收；实际完成按工作日志登记
- 88: 任务负责人：王晨；计划人时：0.5；产物：定义异常和验收场景的文档、图表或记录；完成标准：REQ编号关联用例；认证资料、隐私、状态、冲突、币账本与恢复边界可验收；实际完成按工作日志登记
- 89: 任务负责人：刘景浩；计划人时：3.2；原型覆盖空结果、加载失败、认证提示、草稿保存和运维任务失败
- 90: 任务负责人：刘景浩；计划人时：1.6；原型覆盖空结果、加载失败、认证提示、草稿保存和运维任务失败
- 91: 任务负责人：刘景浩；计划人时：0.8；产物：整理小程序阅读与作者界面的文档、图表或记录；完成标准：原型覆盖空结果、加载失败、认证提示、草稿保存和运维任务失败；实际完成按工作日志登记
- 92: 任务负责人：刘景浩；计划人时：0.8；产物：整理网页创作与阅读线框的文档、图表或记录；完成标准：原型覆盖空结果、加载失败、认证提示、草稿保存和运维任务失败；实际完成按工作日志登记
- 93: 任务负责人：刘景浩；计划人时：1.6；原型覆盖空结果、加载失败、认证提示、草稿保存和运维任务失败
- 94: 任务负责人：刘景浩；计划人时：0.8；产物：核对社区案件与关联定位的文档、图表或记录；完成标准：原型覆盖空结果、加载失败、认证提示、草稿保存和运维任务失败；实际完成按工作日志登记
- 95: 任务负责人：刘景浩；计划人时：0.8；产物：核对独立运维与执行确认的文档、图表或记录；完成标准：原型覆盖空结果、加载失败、认证提示、草稿保存和运维任务失败；实际完成按工作日志登记
- 96: 任务负责人：王晨、刘景浩；计划人时：4.0；需求、原型、权限和异常一致；未决问题记录；10月25日提交材料齐全
- 97: 任务负责人：王晨、刘景浩；计划人时：2.0；补齐FS01FS07可行性输入及SRS追踪；两图符号、数据字典结构式与正则、方案及能力理由和成本效益可解释；各问题有需求或验证归属。
- 98: 任务负责人：王晨、刘景浩；计划人时：1.0；产物：汇总功能非功能与SRS的文档、图表或记录；完成标准：补齐FS01FS07可行性输入及SRS追踪；两图符号、数据字典结构式与正则、方案及能力理由和成本效益可解释；各问题有需求或验证归属。；实际完成按工作日志登记
- 99: 任务负责人：王晨、刘景浩；计划人时：1.0；产物：关联追踪编号与输入版本的文档、图表或记录；完成标准：补齐FS01FS07可行性输入及SRS追踪；两图符号、数据字典结构式与正则、方案及能力理由和成本效益可解释；各问题有需求或验证归属。；实际完成按工作日志登记
- 100: 任务负责人：王晨、刘景浩；计划人时：2.0；FS08文档审查0.50人时纳入本任务，其余1.50人时用于需求PPT和提交；按11项登记实际证据和未关闭项，双方确认。
- 101: 任务负责人：王晨、刘景浩；计划人时：1.0；产物：组织内部需求评审的文档、图表或记录；完成标准：FS08文档审查0.50人时纳入本任务，其余1.50人时用于需求PPT和提交；按11项登记实际证据和未关闭项，双方确认。；实际完成按工作日志登记
- 102: 任务负责人：王晨、刘景浩；计划人时：1.0；产物：核对汇报与提交清单的文档、图表或记录；完成标准：FS08文档审查0.50人时纳入本任务，其余1.50人时用于需求PPT和提交；按11项登记实际证据和未关闭项，双方确认。；实际完成按工作日志登记
- 103: 任务负责人：刘景浩；计划人时：3.2；11月4日新意见在课后完成登记与修订；变更有责任人和复核结论
- 104: 任务负责人：刘景浩；计划人时：1.6；11月4日新意见在课后完成登记与修订；变更有责任人和复核结论
- 105: 任务负责人：刘景浩；计划人时：0.8；产物：登记课堂评审问题的文档、图表或记录；完成标准：11月4日新意见在课后完成登记与修订；变更有责任人和复核结论；实际完成按工作日志登记
- 106: 任务负责人：刘景浩；计划人时：0.8；产物：分析范围接口和排期影响的文档、图表或记录；完成标准：11月4日新意见在课后完成登记与修订；变更有责任人和复核结论；实际完成按工作日志登记

| ID | WBS | Task | Duration | Start | Finish | Predecessors | Total slack | Free slack | Constraint | Resources | Work | Cost | Text1 | Text2 |
| --- | --- | --- | --- | --- | --- | --- | --- | --- | --- | --- | --- | --- | --- | --- |
| 107 | 3.5.2 | **3.5.2 修订需求并同步设计影响** | 0.25d | 2026-11-04 16:00 | 2026-11-04 18:00 | 104 | 0d |  | start no earlier than 2026-11-04 16:00 |  | 1.6h | 73.22 | 刘景浩 | 1.6人时 |
| 108 | 3.5.2.1 | 3.5.2.1 RA10 修订需求与未关闭问题 | 0.12d | 2026-11-04 16:00 | 2026-11-04 17:00 | 104 | 0d |  | start no earlier than 2026-11-04 16:00 | 刘景浩 [80%] | 0.8h | 36.61 | 刘景浩 | 0.8人时 |
| 109 | 3.5.2.2 | 3.5.2.2 RA10 向设计交接确认结果 | 0.12d | 2026-11-04 17:00 | 2026-11-04 18:00 | 108 | 0d |  | start no earlier than 2026-11-04 17:00 | 刘景浩 [80%] | 0.8h | 36.61 | 刘景浩 | 0.8人时 |
| 110 | 3.6 | **3.6 课件核对及三模型骨架** | 2d | 2026-10-28 09:00 | 2026-10-29 18:00 |  | 0.5d |  | start no earlier than 2026-10-28 09:00 |  | 6h | 274.56 | 王晨、刘景浩 | 6人时 |
| 111 | 3.6.1 | **3.6.1 核对课件评审表、用户及范围** | 1d | 2026-10-28 09:00 | 2026-10-28 18:00 | 100 | 0.5d | 0d | start no earlier than 2026-10-28 09:00 |  | 3h | 137.28 | 王晨、刘景浩 | 3人时 |
| 112 | 3.6.1.1 | 3.6.1.1 RA01 核对综合要求与未来范围 | 0.33d | 2026-10-28 09:00 | 2026-10-28 11:40 | 100 | 0.5d | 0d | start no earlier than 2026-10-28 09:00 | 王晨 [21.9%]; 刘景浩 [15.6%] | 1h | 45.76 | 王晨、刘景浩 | 1人时 |
| 113 | 3.6.1.2 | 3.6.1.2 RA02 核对代表来源及获取方法 | 0.33d | 2026-10-28 11:40 | 2026-10-28 15:20 | 112 | 0.5d | 0d | start no earlier than 2026-10-28 11:40 | 王晨 [21.9%]; 刘景浩 [15.6%] | 1h | 45.76 | 王晨、刘景浩 | 1人时 |
| 114 | 3.6.1.3 | 3.6.1.3 RA10 建立课件与评审覆盖索引 | 0.33d | 2026-10-28 15:20 | 2026-10-28 18:00 | 113 | 0.5d |  | start no earlier than 2026-10-28 15:20 | 王晨 [21.9%]; 刘景浩 [15.6%] | 1h | 45.76 | 王晨、刘景浩 | 1人时 |
| 115 | 3.6.2 | **3.6.2 建立ER与分层DFD并交叉核对** | 1d | 2026-10-29 09:00 | 2026-10-29 18:00 | 111 | 0.5d | 0d | start no earlier than 2026-10-29 09:00 |  | 3h | 137.28 | 王晨、刘景浩 | 3人时 |
| 116 | 3.6.2.1 | 3.6.2.1 RA04 建立ER实体属性与基数 | 0.33d | 2026-10-29 09:00 | 2026-10-29 11:40 | 111 | 0.5d | 0d | start no earlier than 2026-10-29 09:00 | 王晨 [21.9%]; 刘景浩 [15.6%] | 1h | 45.76 | 王晨、刘景浩 | 1人时 |
| 117 | 3.6.2.2 | 3.6.2.2 RA05 建立上下文一级和关键二级DFD | 0.42d | 2026-10-29 11:40 | 2026-10-29 16:00 | 116 | 0.5d | 0d | start no earlier than 2026-10-29 11:40 | 王晨 [22%]; 刘景浩 [15.5%] | 1.25h | 57.2 | 王晨、刘景浩 | 1.25人时 |
| 118 | 3.6.2.3 | 3.6.2.3 RA05 核对父子流平衡与边界 | 0.25d | 2026-10-29 16:00 | 2026-10-29 18:00 | 117 | 0.5d |  | start no earlier than 2026-10-29 16:00 | 王晨 [21.7%]; 刘景浩 [15.8%] | 0.75h | 34.32 | 王晨、刘景浩 | 0.75人时 |
| 119 | 3.7 | **3.7 字典规范化及行为辅助模型** | 1d | 2026-10-30 09:00 | 2026-10-30 18:00 |  | 0.5d |  | start no earlier than 2026-10-30 09:00 |  | 5h | 228.8 | 王晨、刘景浩 | 5人时 |
| 120 | 3.7.1 | **3.7.1 细化数据字典正则及规范化** | 0.5d | 2026-10-30 09:00 | 2026-10-30 13:00 | 115 | 0.5d | 0d | start no earlier than 2026-10-30 09:00 |  | 2.5h | 114.4 | 王晨、刘景浩 | 2.5人时 |
| 121 | 3.7.1.1 | 3.7.1.1 RA06 定义字典结构正则与语义 | 0.2d | 2026-10-30 09:00 | 2026-10-30 10:36 | 115 | 0.5d | 0d | start no earlier than 2026-10-30 09:00 | 王晨 [37.5%]; 刘景浩 [25%] | 1h | 45.76 | 王晨、刘景浩 | 1人时 |
| 122 | 3.7.1.2 | 3.7.1.2 RA07 分析函数依赖及1NF至3NF | 0.2d | 2026-10-30 10:36 | 2026-10-30 12:12 | 121 | 0.5d | 0d | start no earlier than 2026-10-30 10:36 | 王晨 [37.5%]; 刘景浩 [25%] | 1h | 45.76 | 王晨、刘景浩 | 1人时 |
| 123 | 3.7.1.3 | 3.7.1.3 RA06 核对处理逻辑与反例约束 | 0.1d | 2026-10-30 12:12 | 2026-10-30 13:00 | 122 | 0.5d |  | start no earlier than 2026-10-30 12:12 | 王晨 [37.5%]; 刘景浩 [25%] | 0.5h | 22.88 | 王晨、刘景浩 | 0.5人时 |
| 124 | 3.7.2 | **3.7.2 核对状态转换及辅助图形** | 0.5d | 2026-10-30 14:00 | 2026-10-30 18:00 | 120 | 0.5d | 0d | start no earlier than 2026-10-30 14:00 |  | 2.5h | 114.4 | 王晨、刘景浩 | 2.5人时 |
| 125 | 3.7.2.1 | 3.7.2.1 RA08 绘制STD与状态转换表 | 0.2d | 2026-10-30 14:00 | 2026-10-30 15:36 | 120 | 0.5d | 0d | start no earlier than 2026-10-30 14:00 | 王晨 [37.5%]; 刘景浩 [25%] | 1h | 45.76 | 王晨、刘景浩 | 1人时 |
| 126 | 3.7.2.2 | 3.7.2.2 RA09 绘制层次方框图 | 0.1d | 2026-10-30 15:36 | 2026-10-30 16:24 | 125 | 0.5d | 0d | start no earlier than 2026-10-30 15:36 | 王晨 [37.5%]; 刘景浩 [25%] | 0.5h | 22.88 | 王晨、刘景浩 | 0.5人时 |
| 127 | 3.7.2.3 | 3.7.2.3 RA09 绘制Warnier图 | 0.1d | 2026-10-30 16:24 | 2026-10-30 17:12 | 126 | 0.5d | 0d | start no earlier than 2026-10-30 16:24 | 王晨 [37.5%]; 刘景浩 [25%] | 0.5h | 22.88 | 王晨、刘景浩 | 0.5人时 |
| 128 | 3.7.2.4 | 3.7.2.4 RA09 编制IPO与改进IPO | 0.1d | 2026-10-30 17:12 | 2026-10-30 18:00 | 127 | 0.5d |  | start no earlier than 2026-10-30 17:12 | 王晨 [37.5%]; 刘景浩 [25%] | 0.5h | 22.88 | 王晨、刘景浩 | 0.5人时 |
| 129 | 3.8 | **3.8 界面线框与真实用户走查** | 1d | 2026-11-02 09:00 | 2026-11-02 18:00 |  | 0.5d |  | start no earlier than 2026-11-02 09:00 |  | 4h | 183.04 | 王晨、刘景浩 | 4人时 |
| 130 | 3.8.1 | **3.8.1 准备导航线框与用户代表任务** | 0.5d | 2026-11-02 09:00 | 2026-11-02 13:00 | 124 | 0.5d | 0d | start no earlier than 2026-11-02 09:00 |  | 2h | 91.52 | 王晨、刘景浩 | 2人时 |
| 131 | 3.8.1.1 | 3.8.1.1 RA03 整理青绿四页与W01至W14线框 | 0.25d | 2026-11-02 09:00 | 2026-11-02 11:00 | 124 | 0.5d | 0d | start no earlier than 2026-11-02 09:00 | 王晨 [19.2%]; 刘景浩 [30.8%] | 1h | 45.76 | 王晨、刘景浩 | 1人时 |
| 132 | 3.8.1.2 | 3.8.1.2 RA03 准备代表和任务走查表 | 0.25d | 2026-11-02 11:00 | 2026-11-02 13:00 | 131 | 0.5d |  | start no earlier than 2026-11-02 11:00 | 王晨 [18.3%]; 刘景浩 [31.7%] | 1h | 45.76 | 王晨、刘景浩 | 1人时 |

Notes:
- 107: 任务负责人：刘景浩；计划人时：1.6；11月4日新意见在课后完成登记与修订；变更有责任人和复核结论
- 108: 任务负责人：刘景浩；计划人时：0.8；产物：修订需求与未关闭问题的文档、图表或记录；完成标准：11月4日新意见在课后完成登记与修订；变更有责任人和复核结论；实际完成按工作日志登记
- 109: 任务负责人：刘景浩；计划人时：0.8；产物：向设计交接确认结果的文档、图表或记录；完成标准：11月4日新意见在课后完成登记与修订；变更有责任人和复核结论；实际完成按工作日志登记
- 110: 任务负责人：王晨、刘景浩；计划人时：6；ER有实体属性和基数；DFD上下文、一级与关键二级对应，范围与权限一致
- 111: 任务负责人：王晨、刘景浩；计划人时：3；ER有实体属性和基数；DFD上下文、一级与关键二级对应，范围与权限一致
- 112: 任务负责人：王晨、刘景浩；计划人时：1.0；产物：核对综合要求与未来范围的文档、图表或记录；完成标准：ER有实体属性和基数；DFD上下文、一级与关键二级对应，范围与权限一致；实际完成按工作日志登记
- 113: 任务负责人：王晨、刘景浩；计划人时：1.0；产物：核对代表来源及获取方法的文档、图表或记录；完成标准：ER有实体属性和基数；DFD上下文、一级与关键二级对应，范围与权限一致；实际完成按工作日志登记
- 114: 任务负责人：王晨、刘景浩；计划人时：1.0；产物：建立课件与评审覆盖索引的文档、图表或记录；完成标准：ER有实体属性和基数；DFD上下文、一级与关键二级对应，范围与权限一致；实际完成按工作日志登记
- 115: 任务负责人：王晨、刘景浩；计划人时：3；ER有实体属性和基数；DFD上下文、一级与关键二级对应，范围与权限一致
- 116: 任务负责人：王晨、刘景浩；计划人时：1.0；产物：建立ER实体属性与基数的文档、图表或记录；完成标准：ER有实体属性和基数；DFD上下文、一级与关键二级对应，范围与权限一致；实际完成按工作日志登记
- 117: 任务负责人：王晨、刘景浩；计划人时：1.25；产物：建立上下文一级和关键二级DFD的文档、图表或记录；完成标准：ER有实体属性和基数；DFD上下文、一级与关键二级对应，范围与权限一致；实际完成按工作日志登记
- 118: 任务负责人：王晨、刘景浩；计划人时：0.75；产物：核对父子流平衡与边界的文档、图表或记录；完成标准：ER有实体属性和基数；DFD上下文、一级与关键二级对应，范围与权限一致；实际完成按工作日志登记
- 119: 任务负责人：王晨、刘景浩；计划人时：5；字段约束完整；1NF至3NF有实例；状态、层次、Warnier和IPO可解释
- 120: 任务负责人：王晨、刘景浩；计划人时：2.5；字段约束完整；1NF至3NF有实例；状态、层次、Warnier和IPO可解释
- 121: 任务负责人：王晨、刘景浩；计划人时：1.0；产物：定义字典结构正则与语义的文档、图表或记录；完成标准：字段约束完整；1NF至3NF有实例；状态、层次、Warnier和IPO可解释；实际完成按工作日志登记
- 122: 任务负责人：王晨、刘景浩；计划人时：1.0；产物：分析函数依赖及1NF至3NF的文档、图表或记录；完成标准：字段约束完整；1NF至3NF有实例；状态、层次、Warnier和IPO可解释；实际完成按工作日志登记
- 123: 任务负责人：王晨、刘景浩；计划人时：0.5；产物：核对处理逻辑与反例约束的文档、图表或记录；完成标准：字段约束完整；1NF至3NF有实例；状态、层次、Warnier和IPO可解释；实际完成按工作日志登记
- 124: 任务负责人：王晨、刘景浩；计划人时：2.5；字段约束完整；1NF至3NF有实例；状态、层次、Warnier和IPO可解释
- 125: 任务负责人：王晨、刘景浩；计划人时：1.0；产物：绘制STD与状态转换表的文档、图表或记录；完成标准：字段约束完整；1NF至3NF有实例；状态、层次、Warnier和IPO可解释；实际完成按工作日志登记
- 126: 任务负责人：王晨、刘景浩；计划人时：0.5；产物：绘制层次方框图的文档、图表或记录；完成标准：字段约束完整；1NF至3NF有实例；状态、层次、Warnier和IPO可解释；实际完成按工作日志登记
- 127: 任务负责人：王晨、刘景浩；计划人时：0.5；产物：绘制Warnier图的文档、图表或记录；完成标准：字段约束完整；1NF至3NF有实例；状态、层次、Warnier和IPO可解释；实际完成按工作日志登记
- 128: 任务负责人：王晨、刘景浩；计划人时：0.5；产物：编制IPO与改进IPO的文档、图表或记录；完成标准：字段约束完整；1NF至3NF有实例；状态、层次、Warnier和IPO可解释；实际完成按工作日志登记
- 129: 任务负责人：王晨、刘景浩；计划人时：4；覆盖正常与异常；真实参与和反馈分别登记，未确认不得代签
- 130: 任务负责人：王晨、刘景浩；计划人时：2；覆盖正常与异常；真实参与和反馈分别登记，未确认不得代签
- 131: 任务负责人：王晨、刘景浩；计划人时：1.0；产物：整理青绿四页与W01至W14线框的文档、图表或记录；完成标准：覆盖正常与异常；真实参与和反馈分别登记，未确认不得代签；实际完成按工作日志登记
- 132: 任务负责人：王晨、刘景浩；计划人时：1.0；产物：准备代表和任务走查表的文档、图表或记录；完成标准：覆盖正常与异常；真实参与和反馈分别登记，未确认不得代签；实际完成按工作日志登记

| ID | WBS | Task | Duration | Start | Finish | Predecessors | Total slack | Free slack | Constraint | Resources | Work | Cost | Text1 | Text2 |
| --- | --- | --- | --- | --- | --- | --- | --- | --- | --- | --- | --- | --- | --- | --- |
| 133 | 3.8.2 | **3.8.2 执行代表走查并登记修改与确认** | 0.5d | 2026-11-02 14:00 | 2026-11-02 18:00 | 130 | 0.5d | 0d | start no earlier than 2026-11-02 14:00 |  | 2h | 91.52 | 王晨、刘景浩 | 2人时 |
| 134 | 3.8.2.1 | 3.8.2.1 RA03 执行任务并记录原话和问题 | 0.25d | 2026-11-02 14:00 | 2026-11-02 16:00 | 130 | 0.5d | 0d | start no earlier than 2026-11-02 14:00 | 王晨 [19.2%]; 刘景浩 [30.8%] | 1h | 45.76 | 王晨、刘景浩 | 1人时 |
| 135 | 3.8.2.2 | 3.8.2.2 RA03 修改原型并取得复核确认 | 0.25d | 2026-11-02 16:00 | 2026-11-02 18:00 | 134 | 0.5d |  | start no earlier than 2026-11-02 16:00 | 王晨 [18.3%]; 刘景浩 [31.7%] | 1h | 45.76 | 王晨、刘景浩 | 1人时 |
| 136 | 3.9 | **3.9 需求验证追踪与阶段提交** | 1d | 2026-11-03 09:00 | 2026-11-03 18:00 |  | 0.5d |  | start no earlier than 2026-11-03 09:00 |  | 5h | 228.8 | 王晨、刘景浩 | 5人时 |
| 137 | 3.9.1 | **3.9.1 同步SRS与四维验证及追踪** | 0.5d | 2026-11-03 09:00 | 2026-11-03 13:00 | 133 | 0.5d | 0d | start no earlier than 2026-11-03 09:00 |  | 2.5h | 114.4 | 王晨、刘景浩 | 2.5人时 |
| 138 | 3.9.1.1 | 3.9.1.1 RA10 执行一致完整现实有效检查 | 0.2d | 2026-11-03 09:00 | 2026-11-03 10:36 | 133 | 0.5d | 0d | start no earlier than 2026-11-03 09:00 | 王晨 [37.5%]; 刘景浩 [25%] | 1h | 45.76 | 王晨、刘景浩 | 1人时 |
| 139 | 3.9.1.2 | 3.9.1.2 RA10 核对FR规则模型与验收追踪 | 0.2d | 2026-11-03 10:36 | 2026-11-03 12:12 | 138 | 0.5d | 0d | start no earlier than 2026-11-03 10:36 | 王晨 [37.5%]; 刘景浩 [25%] | 1h | 45.76 | 王晨、刘景浩 | 1人时 |
| 140 | 3.9.1.3 | 3.9.1.3 RA10 形成SRS候选版本与问题表 | 0.1d | 2026-11-03 12:12 | 2026-11-03 13:00 | 139 | 0.5d |  | start no earlier than 2026-11-03 12:12 | 王晨 [37.5%]; 刘景浩 [25%] | 0.5h | 22.88 | 王晨、刘景浩 | 0.5人时 |
| 141 | 3.9.2 | **3.9.2 同步计划排期并核对评审提交包** | 0.5d | 2026-11-03 14:00 | 2026-11-03 18:00 | 137 | 0.5d |  | start no earlier than 2026-11-03 14:00 |  | 2.5h | 114.4 | 王晨、刘景浩 | 2.5人时 |
| 142 | 3.9.2.1 | 3.9.2.1 RA10 同步计划WBS与排期证据 | 0.2d | 2026-11-03 14:00 | 2026-11-03 15:36 | 137 | 0.5d | 0d | start no earlier than 2026-11-03 14:00 | 王晨 [37.5%]; 刘景浩 [25%] | 1h | 45.76 | 王晨、刘景浩 | 1人时 |
| 143 | 3.9.2.2 | 3.9.2.2 RA10 按两张评审表核对交付包 | 0.2d | 2026-11-03 15:36 | 2026-11-03 17:12 | 142 | 0.5d | 0d | start no earlier than 2026-11-03 15:36 | 王晨 [37.5%]; 刘景浩 [25%] | 1h | 45.76 | 王晨、刘景浩 | 1人时 |
| 144 | 3.9.2.3 | 3.9.2.3 RA10 准备讲稿与排练交接 | 0.1d | 2026-11-03 17:12 | 2026-11-03 18:00 | 143 | 0.5d |  | start no earlier than 2026-11-03 17:12 | 王晨 [37.5%]; 刘景浩 [25%] | 0.5h | 22.88 | 王晨、刘景浩 | 0.5人时 |
| 145 | 4 | **4 总体与详细设计** | 24d | 2026-10-26 09:00 | 2026-11-26 18:00 |  | 0d |  |  |  | 32.1h | 1,468.9 | 按下级分配 | 32.1人时 |
| 146 | 4.1 | **4.1 系统架构、接口与数据库设计** | 3d | 2026-10-26 09:00 | 2026-10-28 18:00 |  | 1d |  |  |  | 4.5h | 205.92 | 王晨 | 4.5人时 |
| 147 | 4.1.1 | 4.1.1 设计业务模块与接口契约 | 1d | 2026-10-26 09:00 | 2026-10-26 18:00 | 100 | 1d | 0d | start no earlier than 2026-10-26 09:00 | 王晨 [31.2%] | 2.5h | 114.4 | 王晨 | 2.5人时 |
| 148 | 4.1.2 | 4.1.2 设计数据关系与本机部署边界 | 2d | 2026-10-27 09:00 | 2026-10-28 18:00 | 147 | 1d | 0d | start no earlier than 2026-10-27 09:00 | 王晨 [12.5%] | 2h | 91.52 | 王晨 | 2人时 |
| 149 | 4.2 | **4.2 认证、内容、激励与治理设计** | 2d | 2026-10-29 09:00 | 2026-10-30 18:00 |  | 1d |  |  |  | 4.5h | 205.92 | 王晨 | 4.5人时 |
| 150 | 4.2.1 | 4.2.1 细化认证文章与治理状态 | 1d | 2026-10-29 09:00 | 2026-10-29 18:00 | 148 | 1d | 0d | start no earlier than 2026-10-29 09:00 | 王晨 [31.2%] | 2.5h | 114.4 | 王晨 | 2.5人时 |
| 151 | 4.2.2 | 4.2.2 细化币事务、隐私及异常处理 | 1d | 2026-10-30 09:00 | 2026-10-30 18:00 | 150 | 1d | 0d | start no earlier than 2026-10-30 09:00 | 王晨 [25%] | 2h | 91.52 | 王晨 | 2人时 |
| 152 | 4.3 | **4.3 双端浏览与创作详细设计** | 3d | 2026-10-29 09:00 | 2026-11-02 18:00 |  | 1d |  |  |  | 4.5h | 205.92 | 刘景浩 | 4.5人时 |
| 153 | 4.3.1 | 4.3.1 设计网页Markdown与移动图文 | 1d | 2026-10-29 09:00 | 2026-10-29 18:00 | 148 | 1d | 0d | start no earlier than 2026-10-29 09:00 | 刘景浩 [31.2%] | 2.5h | 114.4 | 刘景浩 | 2.5人时 |
| 154 | 4.3.2 | 4.3.2 设计图片、草稿和跨端编辑流程 | 2d | 2026-10-30 09:00 | 2026-11-02 18:00 | 153 | 1d | 0d | start no earlier than 2026-10-30 09:00 | 刘景浩 [12.5%] | 2h | 91.52 | 刘景浩 | 2人时 |
| 155 | 4.4 | **4.4 部署、备份与恢复详细设计** | 2d | 2026-11-02 09:00 | 2026-11-03 18:00 |  | 1d |  |  |  | 4.5h | 205.92 | 王晨 | 4.5人时 |
| 156 | 4.4.1 | 4.4.1 定义运维接口、鉴权与白名单 | 1d | 2026-11-02 09:00 | 2026-11-02 18:00 | 151 | 1d | 0d | start no earlier than 2026-11-02 09:00 | 王晨 [31.2%] | 2.5h | 114.4 | 王晨 | 2.5人时 |
| 157 | 4.4.2 | 4.4.2 设计备份一致性、恢复与失败保护 | 1d | 2026-11-03 09:00 | 2026-11-03 18:00 | 156 | 1d |  | start no earlier than 2026-11-03 09:00 | 王晨 [25%] | 2h | 91.52 | 王晨 | 2人时 |

Notes:
- 133: 任务负责人：王晨、刘景浩；计划人时：2；覆盖正常与异常；真实参与和反馈分别登记，未确认不得代签
- 134: 任务负责人：王晨、刘景浩；计划人时：1.0；产物：执行任务并记录原话和问题的文档、图表或记录；完成标准：覆盖正常与异常；真实参与和反馈分别登记，未确认不得代签；实际完成按工作日志登记
- 135: 任务负责人：王晨、刘景浩；计划人时：1.0；产物：修改原型并取得复核确认的文档、图表或记录；完成标准：覆盖正常与异常；真实参与和反馈分别登记，未确认不得代签；实际完成按工作日志登记
- 136: 任务负责人：王晨、刘景浩；计划人时：5；一致完整现实有效四项检查；未关闭问题有责任期限；提交材料同版本
- 137: 任务负责人：王晨、刘景浩；计划人时：2.5；一致完整现实有效四项检查；未关闭问题有责任期限；提交材料同版本
- 138: 任务负责人：王晨、刘景浩；计划人时：1.0；产物：执行一致完整现实有效检查的文档、图表或记录；完成标准：一致完整现实有效四项检查；未关闭问题有责任期限；提交材料同版本；实际完成按工作日志登记
- 139: 任务负责人：王晨、刘景浩；计划人时：1.0；产物：核对FR规则模型与验收追踪的文档、图表或记录；完成标准：一致完整现实有效四项检查；未关闭问题有责任期限；提交材料同版本；实际完成按工作日志登记
- 140: 任务负责人：王晨、刘景浩；计划人时：0.5；产物：形成SRS候选版本与问题表的文档、图表或记录；完成标准：一致完整现实有效四项检查；未关闭问题有责任期限；提交材料同版本；实际完成按工作日志登记
- 141: 任务负责人：王晨、刘景浩；计划人时：2.5；一致完整现实有效四项检查；未关闭问题有责任期限；提交材料同版本
- 142: 任务负责人：王晨、刘景浩；计划人时：1.0；产物：同步计划WBS与排期证据的文档、图表或记录；完成标准：一致完整现实有效四项检查；未关闭问题有责任期限；提交材料同版本；实际完成按工作日志登记
- 143: 任务负责人：王晨、刘景浩；计划人时：1.0；产物：按两张评审表核对交付包的文档、图表或记录；完成标准：一致完整现实有效四项检查；未关闭问题有责任期限；提交材料同版本；实际完成按工作日志登记
- 144: 任务负责人：王晨、刘景浩；计划人时：0.5；产物：准备讲稿与排练交接的文档、图表或记录；完成标准：一致完整现实有效四项检查；未关闭问题有责任期限；提交材料同版本；实际完成按工作日志登记
- 145: 任务负责人：按下级分配；计划人时：32.1；汇总不重复计费
- 146: 任务负责人：王晨；计划人时：4.5；共享API、错误响应、版本号、ER和权限边界明确；客户端不直连数据库
- 147: 任务负责人：王晨；计划人时：2.5；共享API、错误响应、版本号、ER和权限边界明确；客户端不直连数据库
- 148: 任务负责人：王晨；计划人时：2.0；共享API、错误响应、版本号、ER和权限边界明确；客户端不直连数据库
- 149: 任务负责人：王晨；计划人时：4.5；验证码失效、越权、版本冲突、重复请求、下架及申诉均有处理规则
- 150: 任务负责人：王晨；计划人时：2.5；验证码失效、越权、版本冲突、重复请求、下架及申诉均有处理规则
- 151: 任务负责人：王晨；计划人时：2.0；验证码失效、越权、版本冲突、重复请求、下架及申诉均有处理规则
- 152: 任务负责人：刘景浩；计划人时：4.5；复杂正文不能被移动端静默覆盖；上传失败保留正文；编辑冲突可识别
- 153: 任务负责人：刘景浩；计划人时：2.5；复杂正文不能被移动端静默覆盖；上传失败保留正文；编辑冲突可识别
- 154: 任务负责人：刘景浩；计划人时：2.0；复杂正文不能被移动端静默覆盖；上传失败保留正文；编辑冲突可识别
- 155: 任务负责人：王晨；计划人时：4.5；执行器独立于业务进程；固定目标；任务互斥；恢复前保护现有数据
- 156: 任务负责人：王晨；计划人时：2.5；执行器独立于业务进程；固定目标；任务互斥；恢复前保护现有数据
- 157: 任务负责人：王晨；计划人时：2.0；执行器独立于业务进程；固定目标；任务互斥；恢复前保护现有数据

| ID | WBS | Task | Duration | Start | Finish | Predecessors | Total slack | Free slack | Constraint | Deadline | Resources | Work | Cost | Text1 | Text2 |
| --- | --- | --- | --- | --- | --- | --- | --- | --- | --- | --- | --- | --- | --- | --- | --- |
| 158 | 4.5 | **4.5 内部设计评审与文档基线** | 1d | 2026-11-05 09:00 | 2026-11-05 18:00 |  | 0d |  |  |  |  | 4.8h | 219.65 | 王晨、刘景浩 | 4.8人时 |
| 159 | 4.5.1 | 4.5.1 共同核对总体与详细设计 | 0.5d | 2026-11-05 09:00 | 2026-11-05 13:00 | 154, 157, 163, 107 | 0d |  | start no earlier than 2026-11-05 09:00 |  | 王晨 [30%]; 刘景浩 [30%] | 2.4h | 109.82 | 王晨、刘景浩 | 2.4人时 |
| 160 | 4.5.2 | 4.5.2 共同评审并确认内部设计基线 | 0.5d | 2026-11-05 14:00 | 2026-11-05 18:00 | 159 | 0d |  | start no earlier than 2026-11-05 14:00 | 2026-11-05 18:00 | 王晨 [30%]; 刘景浩 [30%] | 2.4h | 109.82 | 王晨、刘景浩 | 2.4人时 |
| 161 | 4.6 | **4.6 测试用例设计与数据准备** | 1d | 2026-11-03 09:00 | 2026-11-03 18:00 |  | 1d |  |  |  |  | 4.5h | 205.92 | 刘景浩 | 4.5人时 |
| 162 | 4.6.1 | 4.6.1 编制核心与异常验收用例 | 0.5d | 2026-11-03 09:00 | 2026-11-03 13:00 | 154, 151 | 1d | 0d | start no earlier than 2026-11-03 09:00 |  | 刘景浩 [62.5%] | 2.5h | 114.4 | 刘景浩 | 2.5人时 |
| 163 | 4.6.2 | 4.6.2 准备合成数据和性能脚本方案 | 0.5d | 2026-11-03 14:00 | 2026-11-03 18:00 | 162 | 1d |  | start no earlier than 2026-11-03 14:00 |  | 刘景浩 [31.2%]; 王晨 [18.8%] | 2h | 91.52 | 刘景浩 | 2人时 |
| 164 | 4.7 | **4.7 课堂设计反馈与模块调整** | 1d | 2026-11-26 09:00 | 2026-11-26 18:00 |  | 0d |  |  |  |  | 4.8h | 219.65 | 王晨、刘景浩 | 4.8人时 |
| 165 | 4.7.1 | 4.7.1 共同登记课堂设计意见 | 0.5d | 2026-11-26 09:00 | 2026-11-26 13:00 | 191, 200 | 0d |  | start no earlier than 2026-11-26 09:00 |  | 王晨 [30%]; 刘景浩 [30%] | 2.4h | 109.82 | 王晨、刘景浩 | 2.4人时 |
| 166 | 4.7.2 | 4.7.2 分别调整模块并共同复核 | 0.5d | 2026-11-26 14:00 | 2026-11-26 18:00 | 165 | 0d |  | start no earlier than 2026-11-26 14:00 |  | 王晨 [30%]; 刘景浩 [30%] | 2.4h | 109.82 | 王晨、刘景浩 | 2.4人时 |
| 167 | 5 | **5 编码与单元测试** | 16d | 2026-11-06 09:00 | 2026-11-27 18:00 |  | 0d |  |  |  |  | 58.8h | 2,690.69 | 按下级分配 | 58.8人时 |
| 168 | 5.1 | **5.1 项目骨架、配置与接口约定** | 1d | 2026-11-06 09:00 | 2026-11-06 18:00 |  | 1d |  |  |  |  | 1.8h | 82.37 | 王晨 | 1.8人时 |
| 169 | 5.1.1 | 5.1.1 搭建模块骨架与环境配置 | 0.5d | 2026-11-06 09:00 | 2026-11-06 13:00 | 160 | 1d | 0d | start no earlier than 2026-11-06 09:00 |  | 王晨 [20%] | 0.8h | 36.61 | 王晨 | 0.8人时 |
| 170 | 5.1.2 | 5.1.2 核对共享接口和错误格式 | 0.5d | 2026-11-06 14:00 | 2026-11-06 18:00 | 169 | 1d | 0d | start no earlier than 2026-11-06 14:00 |  | 王晨 [25%] | 1h | 45.76 | 王晨 | 1人时 |
| 171 | 5.2 | **5.2 登录、邮箱与材料认证** | 2d | 2026-11-09 09:00 | 2026-11-10 18:00 |  | 1d |  |  |  |  | 3h | 137.28 | 王晨 | 3人时 |
| 172 | 5.2.1 | 5.2.1 实现登录与校园邮箱验证 | 1d | 2026-11-09 09:00 | 2026-11-09 18:00 | 170 | 1d | 0d | start no earlier than 2026-11-09 09:00 |  | 王晨 [18.8%] | 1.5h | 68.64 | 王晨 | 1.5人时 |
| 173 | 5.2.2 | 5.2.2 实现材料认证接口和角色限制 | 1d | 2026-11-10 09:00 | 2026-11-10 18:00 | 172 | 1d | 0d | start no earlier than 2026-11-10 09:00 |  | 王晨 [18.8%] | 1.5h | 68.64 | 王晨 | 1.5人时 |
| 174 | 5.3 | **5.3 文章存储、岗位检索与筛选接口** | 3d | 2026-11-11 09:00 | 2026-11-13 18:00 |  | 1d |  |  |  |  | 2h | 91.52 | 王晨 | 2人时 |
| 175 | 5.3.1 | 5.3.1 实现文章图片、草稿存储接口 | 1d | 2026-11-11 09:00 | 2026-11-11 18:00 | 173 | 1d | 0d | start no earlier than 2026-11-11 09:00 |  | 王晨 [12.5%] | 1h | 45.76 | 王晨 | 1人时 |
| 176 | 5.3.2 | 5.3.2 实现岗位专业公司筛选与分页 | 2d | 2026-11-12 09:00 | 2026-11-13 18:00 | 175 | 1d | 0d | start no earlier than 2026-11-12 09:00 |  | 王晨 [6.2%] | 1h | 45.76 | 王晨 | 1人时 |
| 177 | 5.4 | **5.4 小程序与网页阅读页面** | 3d | 2026-11-06 09:00 | 2026-11-10 18:00 |  | 0d |  |  |  |  | 5.5h | 251.68 | 刘景浩 | 5.5人时 |
| 178 | 5.4.1 | 5.4.1 实现双端筛选与阅读界面 | 1d | 2026-11-06 09:00 | 2026-11-06 18:00 | 160 | 0d |  | start no earlier than 2026-11-06 09:00 |  | 刘景浩 [43.8%] | 3.5h | 160.16 | 刘景浩 | 3.5人时 |
| 179 | 5.4.2 | 5.4.2 核对游客状态、失败和空结果 | 2d | 2026-11-09 09:00 | 2026-11-10 18:00 | 178 | 0d |  | start no earlier than 2026-11-09 09:00 |  | 刘景浩 [12.5%] | 2h | 91.52 | 刘景浩 | 2人时 |
| 180 | 5.5 | **5.5 网页Markdown创作与草稿** | 3d | 2026-11-11 09:00 | 2026-11-13 18:00 |  | 0d |  |  |  |  | 5.5h | 251.68 | 刘景浩 | 5.5人时 |
| 181 | 5.5.1 | 5.5.1 实现Markdown、图片和资料链接 | 1d | 2026-11-11 09:00 | 2026-11-11 18:00 | 179 | 0d |  | start no earlier than 2026-11-11 09:00 |  | 刘景浩 [43.8%] | 3.5h | 160.16 | 刘景浩 | 3.5人时 |
| 182 | 5.5.2 | 5.5.2 实现预览、保存与草稿恢复 | 2d | 2026-11-12 09:00 | 2026-11-13 18:00 | 181 | 0d |  | start no earlier than 2026-11-12 09:00 |  | 刘景浩 [12.5%] | 2h | 91.52 | 刘景浩 | 2人时 |

Notes:
- 158: 任务负责人：王晨、刘景浩；计划人时：4.8；关键设计问题关闭；SRS、接口、数据、流程和测试条件一致
- 159: 任务负责人：王晨、刘景浩；计划人时：2.4；关键设计问题关闭；SRS、接口、数据、流程和测试条件一致
- 160: 任务负责人：王晨、刘景浩；计划人时：2.4；关键设计问题关闭；SRS、接口、数据、流程和测试条件一致
- 161: 任务负责人：刘景浩；计划人时：4.5；覆盖五类角色、双端、账本、恢复、性能压力与稳定性；数据不含真实隐私
- 162: 任务负责人：刘景浩；计划人时：2.5；覆盖五类角色、双端、账本、恢复、性能压力与稳定性；数据不含真实隐私
- 163: 任务负责人：刘景浩；计划人时：2.0；覆盖五类角色、双端、账本、恢复、性能压力与稳定性；数据不含真实隐私
- 164: 任务负责人：王晨、刘景浩；计划人时：4.8；11月25日意见同步至需求、设计、接口和实现；大改经影响评估排期
- 165: 任务负责人：王晨、刘景浩；计划人时：2.4；11月25日意见同步至需求、设计、接口和实现；大改经影响评估排期
- 166: 任务负责人：王晨、刘景浩；计划人时：2.4；11月25日意见同步至需求、设计、接口和实现；大改经影响评估排期
- 167: 任务负责人：按下级分配；计划人时：58.8；汇总不重复计费
- 168: 任务负责人：王晨；计划人时：1.8；双方按契约独立工作；配置与凭据分离；构建入口可复现
- 169: 任务负责人：王晨；计划人时：0.8；双方按契约独立工作；配置与凭据分离；构建入口可复现
- 170: 任务负责人：王晨；计划人时：1.0；双方按契约独立工作；配置与凭据分离；构建入口可复现
- 171: 任务负责人：王晨；计划人时：3.0；验证码错误、过期和发送失败有反馈；认证材料受控；审核有理由与通知
- 172: 任务负责人：王晨；计划人时：1.5；验证码错误、过期和发送失败有反馈；认证材料受控；审核有理由与通知
- 173: 任务负责人：王晨；计划人时：1.5；验证码错误、过期和发送失败有反馈；认证材料受控；审核有理由与通知
- 174: 任务负责人：王晨；计划人时：2.0；草稿不公开；组合检索准确；图片关联正确；错误响应与版本字段符合契约
- 175: 任务负责人：王晨；计划人时：1.0；草稿不公开；组合检索准确；图片关联正确；错误响应与版本字段符合契约
- 176: 任务负责人：王晨；计划人时：1.0；草稿不公开；组合检索准确；图片关联正确；错误响应与版本字段符合契约
- 177: 任务负责人：刘景浩；计划人时：5.5；此时按契约使用模拟数据并明确标注；真实API接入在5.12完成
- 178: 任务负责人：刘景浩；计划人时：3.5；此时按契约使用模拟数据并明确标注；真实API接入在5.12完成
- 179: 任务负责人：刘景浩；计划人时：2.0；此时按契约使用模拟数据并明确标注；真实API接入在5.12完成
- 180: 任务负责人：刘景浩；计划人时：5.5；正文图片保存一致；失败保留内容；危险脚本过滤；复杂正文格式保留
- 181: 任务负责人：刘景浩；计划人时：3.5；正文图片保存一致；失败保留内容；危险脚本过滤；复杂正文格式保留
- 182: 任务负责人：刘景浩；计划人时：2.0；正文图片保存一致；失败保留内容；危险脚本过滤；复杂正文格式保留

| ID | WBS | Task | Duration | Start | Finish | Predecessors | Total slack | Free slack | Constraint | Deadline | Resources | Work | Cost | Text1 | Text2 |
| --- | --- | --- | --- | --- | --- | --- | --- | --- | --- | --- | --- | --- | --- | --- | --- |
| 183 | 5.6 | **5.6 小程序文字与图片创作** | 2d | 2026-11-16 09:00 | 2026-11-17 18:00 |  | 1d |  |  |  |  | 5.5h | 251.68 | 王晨 | 5.5人时 |
| 184 | 5.6.1 | 5.6.1 实现移动图文编辑和上传 | 1d | 2026-11-16 09:00 | 2026-11-16 18:00 | 176 | 1d | 0d | start no earlier than 2026-11-16 09:00 |  | 王晨 [43.8%] | 3.5h | 160.16 | 王晨 | 3.5人时 |
| 185 | 5.6.2 | 5.6.2 实现移动草稿保存及恢复 | 1d | 2026-11-17 09:00 | 2026-11-17 18:00 | 184 | 1d | 0d | start no earlier than 2026-11-17 09:00 |  | 王晨 [25%] | 2h | 91.52 | 王晨 | 2人时 |
| 186 | 5.7 | **5.7 双端草稿、发布与文章管理** | 2d | 2026-11-18 09:00 | 2026-11-19 18:00 |  | 1d |  |  |  |  | 5.5h | 251.68 | 王晨 | 5.5人时 |
| 187 | 5.7.1 | 5.7.1 实现发布、修改、下架和恢复接口 | 1d | 2026-11-18 09:00 | 2026-11-18 18:00 | 185, 182 | 1d | 0d | start no earlier than 2026-11-18 09:00 |  | 王晨 [43.8%] | 3.5h | 160.16 | 王晨 | 3.5人时 |
| 188 | 5.7.2 | 5.7.2 接通双端作者文章管理 | 1d | 2026-11-19 09:00 | 2026-11-19 18:00 | 187 | 1d | 0d | start no earlier than 2026-11-19 09:00 |  | 王晨 [12.5%]; 刘景浩 [12.5%] | 2h | 91.52 | 王晨 | 2人时 |
| 189 | 5.8 | **5.8 评论、点赞、投币、收藏与荣誉** | 3d | 2026-11-20 09:00 | 2026-11-24 18:00 |  | 1d |  |  |  |  | 5.5h | 251.68 | 王晨 | 5.5人时 |
| 190 | 5.8.1 | 5.8.1 实现主页、评论图片及收藏交流 | 1d | 2026-11-20 09:00 | 2026-11-20 18:00 | 188 | 1d | 0d | start no earlier than 2026-11-20 09:00 |  | 王晨 [43.8%] | 3.5h | 160.16 | 王晨 | 3.5人时 |
| 191 | 5.8.2 | 5.8.2 实现点赞、领取投币、荣誉排序与通知 | 2d | 2026-11-23 09:00 | 2026-11-24 18:00 | 190 | 1d |  | start no earlier than 2026-11-23 09:00 |  | 王晨 [12.5%] | 2h | 91.52 | 王晨 | 2人时 |
| 192 | 5.9 | **5.9 社区审核、反馈与举报网页** | 3d | 2026-11-16 09:00 | 2026-11-18 18:00 |  | 0d |  |  |  |  | 5.5h | 251.68 | 刘景浩 | 5.5人时 |
| 193 | 5.9.1 | 5.9.1 实现认证审核与举报反馈处理接口 | 1d | 2026-11-16 09:00 | 2026-11-16 18:00 | 182 | 0d |  | start no earlier than 2026-11-16 09:00 |  | 刘景浩 [43.8%] | 3.5h | 160.16 | 刘景浩 | 3.5人时 |
| 194 | 5.9.2 | 5.9.2 实现社区管理网页并联调 | 2d | 2026-11-17 09:00 | 2026-11-18 18:00 | 193 | 0d |  | start no earlier than 2026-11-17 09:00 |  | 刘景浩 [12.5%] | 2h | 91.52 | 刘景浩 | 2人时 |
| 195 | 5.10 | **5.10 独立运维执行与备份服务** | 3d | 2026-11-19 09:00 | 2026-11-23 18:00 |  | 0d |  |  |  |  | 6.5h | 297.44 | 刘景浩 | 6.5人时 |
| 196 | 5.10.1 | 5.10.1 实现独立运维任务执行服务 | 1d | 2026-11-19 09:00 | 2026-11-19 18:00 | 194 | 0d |  | start no earlier than 2026-11-19 09:00 |  | 刘景浩 [50%] | 4h | 183.04 | 刘景浩 | 4人时 |
| 197 | 5.10.2 | 5.10.2 实现部署重启、备份恢复及失败保护 | 2d | 2026-11-20 09:00 | 2026-11-23 18:00 | 196 | 0d |  | start no earlier than 2026-11-20 09:00 |  | 刘景浩 [15.6%] | 2.5h | 114.4 | 刘景浩 | 2.5人时 |
| 198 | 5.11 | **5.11 运维网页、状态与操作记录** | 2d | 2026-11-24 09:00 | 2026-11-25 18:00 |  | 0d |  |  |  |  | 6.5h | 297.44 | 刘景浩 | 6.5人时 |
| 199 | 5.11.1 | 5.11.1 实现运维状态、日志和备份列表 | 1d | 2026-11-24 09:00 | 2026-11-24 18:00 | 197 | 0d |  | start no earlier than 2026-11-24 09:00 |  | 刘景浩 [50%] | 4h | 183.04 | 刘景浩 | 4人时 |
| 200 | 5.11.2 | 5.11.2 联调网页部署重启与备份恢复 | 1d | 2026-11-25 09:00 | 2026-11-25 18:00 | 199 | 0d |  | start no earlier than 2026-11-25 09:00 |  | 刘景浩 [31.2%] | 2.5h | 114.4 | 刘景浩 | 2.5人时 |
| 201 | 5.12 | **5.12 系统联调、构建与实现基线** | 1d | 2026-11-27 09:00 | 2026-11-27 18:00 |  | 0d |  |  |  |  | 6h | 274.56 | 王晨、刘景浩 | 6人时 |
| 202 | 5.12.1 | 5.12.1 双方接通真实接口与跨端链路 | 0.5d | 2026-11-27 09:00 | 2026-11-27 13:00 | 166 | 0d |  | start no earlier than 2026-11-27 09:00 |  | 王晨 [37.5%]; 刘景浩 [37.5%] | 3h | 137.28 | 王晨、刘景浩 | 3人时 |
| 203 | 5.12.2 | 5.12.2 构建候选版本并归档实现证据 | 0.5d | 2026-11-27 14:00 | 2026-11-27 18:00 | 202 | 0d |  | start no earlier than 2026-11-27 14:00 | 2026-11-27 18:00 | 王晨 [37.5%]; 刘景浩 [37.5%] | 3h | 137.28 | 王晨、刘景浩 | 3人时 |
| 204 | 6 | **6 综合测试** | 7d | 2026-11-30 09:00 | 2026-12-08 18:00 |  | 0d |  |  |  |  | 22.6h | 1,034.18 | 按下级分配 | 22.6人时 |
| 205 | 6.1 | **6.1 功能、接口与集成测试** | 2d | 2026-11-30 09:00 | 2026-12-01 18:00 |  | 0d |  |  |  |  | 2.7h | 123.55 | 刘景浩 | 2.7人时 |
| 206 | 6.1.1 | 6.1.1 执行角色及核心业务功能用例 | 1d | 2026-11-30 09:00 | 2026-11-30 18:00 | 203 | 0d |  | start no earlier than 2026-11-30 09:00 |  | 刘景浩 [15%] | 1.2h | 54.91 | 刘景浩 | 1.2人时 |
| 207 | 6.1.2 | 6.1.2 执行接口、集成和失败场景 | 1d | 2026-12-01 09:00 | 2026-12-01 18:00 | 206 | 0d |  | start no earlier than 2026-12-01 09:00 |  | 刘景浩 [18.8%] | 1.5h | 68.64 | 刘景浩 | 1.5人时 |

Notes:
- 183: 任务负责人：王晨；计划人时：5.5；手机能完成图文创作；失败图片可逐项重试；不静默覆盖复杂正文
- 184: 任务负责人：王晨；计划人时：3.5；手机能完成图文创作；失败图片可逐项重试；不静默覆盖复杂正文
- 185: 任务负责人：王晨；计划人时：2.0；手机能完成图文创作；失败图片可逐项重试；不静默覆盖复杂正文
- 186: 任务负责人：王晨；计划人时：5.5；更新有版本冲突提示；管理员下架不可由作者自行恢复；删除不误删他人数据
- 187: 任务负责人：王晨；计划人时：3.5；更新有版本冲突提示；管理员下架不可由作者自行恢复；删除不误删他人数据
- 188: 任务负责人：王晨；计划人时：2.0；更新有版本冲突提示；管理员下架不可由作者自行恢复；删除不误删他人数据
- 189: 任务负责人：王晨；计划人时：5.5；未认证不能取得评论主页联系方式；作者关闭联系立即生效；余额不负、不自投、不重复奖励；贡献与消费分开
- 190: 任务负责人：王晨；计划人时：3.5；未认证不能取得评论主页联系方式；作者关闭联系立即生效；余额不负、不自投、不重复奖励；贡献与消费分开
- 191: 任务负责人：王晨；计划人时：2.0；未认证不能取得评论主页联系方式；作者关闭联系立即生效；余额不负、不自投、不重复奖励；贡献与消费分开
- 192: 任务负责人：刘景浩；计划人时：5.5；刘景浩同时负责社区处理API与网页；复用认证契约；一键定位原文评论；理由、通知、限制申诉及审计可追溯
- 193: 任务负责人：刘景浩；计划人时：3.5；刘景浩同时负责社区处理API与网页；复用认证契约；一键定位原文评论；理由、通知、限制申诉及审计可追溯
- 194: 任务负责人：刘景浩；计划人时：2.0；刘景浩同时负责社区处理API与网页；复用认证契约；一键定位原文评论；理由、通知、限制申诉及审计可追溯
- 195: 任务负责人：刘景浩；计划人时：6.5；仅受控服务与目录；任务互斥且持久；恢复前备份；数据库与图片一致；业务停机仍可查任务
- 196: 任务负责人：刘景浩；计划人时：4.0；仅受控服务与目录；任务互斥且持久；恢复前备份；数据库与图片一致；业务停机仍可查任务
- 197: 任务负责人：刘景浩；计划人时：2.5；仅受控服务与目录；任务互斥且持久；恢复前备份；数据库与图片一致；业务停机仍可查任务
- 198: 任务负责人：刘景浩；计划人时：6.5；各动作显示目标与影响并确认；显示运行、成功、失败状态和审计；不提供任意命令输入
- 199: 任务负责人：刘景浩；计划人时：4.0；各动作显示目标与影响并确认；显示运行、成功、失败状态和审计；不提供任意命令输入
- 200: 任务负责人：刘景浩；计划人时：2.5；各动作显示目标与影响并确认；显示运行、成功、失败状态和审计；不提供任意命令输入
- 201: 任务负责人：王晨、刘景浩；计划人时：6.0；关闭模拟数据替代API的缺口；五类角色、业务与运维真实联通；接口、代码和用例一致
- 202: 任务负责人：王晨、刘景浩；计划人时：3.0；关闭模拟数据替代API的缺口；五类角色、业务与运维真实联通；接口、代码和用例一致
- 203: 任务负责人：王晨、刘景浩；计划人时：3.0；关闭模拟数据替代API的缺口；五类角色、业务与运维真实联通；接口、代码和用例一致
- 204: 任务负责人：按下级分配；计划人时：22.6；汇总不重复计费
- 205: 任务负责人：刘景浩；计划人时：2.7；阅读认证创作交流管理全链路通过；失败输入、数据断言与缺陷可复现
- 206: 任务负责人：刘景浩；计划人时：1.2；阅读认证创作交流管理全链路通过；失败输入、数据断言与缺陷可复现
- 207: 任务负责人：刘景浩；计划人时：1.5；阅读认证创作交流管理全链路通过；失败输入、数据断言与缺陷可复现

| ID | WBS | Task | Duration | Start | Finish | Predecessors | Total slack | Free slack | Constraint | Deadline | Resources | Work | Cost | Text1 | Text2 |
| --- | --- | --- | --- | --- | --- | --- | --- | --- | --- | --- | --- | --- | --- | --- | --- |
| 208 | 6.2 | **6.2 性能与负载测试** | 2d | 2026-11-30 09:00 | 2026-12-01 18:00 |  | 0d |  |  |  |  | 2.7h | 123.55 | 王晨 | 2.7人时 |
| 209 | 6.2.1 | 6.2.1 固定环境执行30并发负载 | 1d | 2026-11-30 09:00 | 2026-11-30 18:00 | 203 | 0d |  | start no earlier than 2026-11-30 09:00 |  | 王晨 [15%] | 1.2h | 54.91 | 王晨 | 1.2人时 |
| 210 | 6.2.2 | 6.2.2 分析P95、错误率与资源占用 | 1d | 2026-12-01 09:00 | 2026-12-01 18:00 | 209 | 0d |  | start no earlier than 2026-12-01 09:00 |  | 王晨 [18.8%] | 1.5h | 68.64 | 王晨 | 1.5人时 |
| 211 | 6.3 | **6.3 压力与稳定性测试** | 1d | 2026-12-02 09:00 | 2026-12-02 18:00 |  | 0d |  |  |  |  | 2.7h | 123.55 | 王晨 | 2.7人时 |
| 212 | 6.3.1 | 6.3.1 执行阶梯压力寻找容量边界 | 0.5d | 2026-12-02 09:00 | 2026-12-02 13:00 | 210 | 0d |  | start no earlier than 2026-12-02 09:00 |  | 王晨 [30%] | 1.2h | 54.91 | 王晨 | 1.2人时 |
| 213 | 6.3.2 | 6.3.2 执行稳定性与降载恢复 | 0.5d | 2026-12-02 14:00 | 2026-12-02 18:00 | 212 | 0d |  | start no earlier than 2026-12-02 14:00 |  | 王晨 [37.5%] | 1.5h | 68.64 | 王晨 | 1.5人时 |
| 214 | 6.4 | **6.4 安全权限与双端兼容测试** | 1d | 2026-12-02 09:00 | 2026-12-02 18:00 |  | 0d |  |  |  |  | 2.7h | 123.55 | 刘景浩 | 2.7人时 |
| 215 | 6.4.1 | 6.4.1 执行越权隐私与危险输入检查 | 0.5d | 2026-12-02 09:00 | 2026-12-02 13:00 | 207 | 0d |  | start no earlier than 2026-12-02 09:00 |  | 刘景浩 [30%] | 1.2h | 54.91 | 刘景浩 | 1.2人时 |
| 216 | 6.4.2 | 6.4.2 执行双端浏览编辑与图片兼容 | 0.5d | 2026-12-02 14:00 | 2026-12-02 18:00 | 215 | 0d |  | start no earlier than 2026-12-02 14:00 |  | 刘景浩 [37.5%] | 1.5h | 68.64 | 刘景浩 | 1.5人时 |
| 217 | 6.5 | **6.5 部署、故障与备份恢复验证** | 1d | 2026-12-03 09:00 | 2026-12-03 18:00 |  | 0.5d |  |  |  |  | 2.7h | 123.55 | 王晨 | 2.7人时 |
| 218 | 6.5.1 | 6.5.1 验证冷启动与网页运维操作 | 0.5d | 2026-12-03 09:00 | 2026-12-03 13:00 | 213 | 0.5d | 0d | start no earlier than 2026-12-03 09:00 |  | 王晨 [30%] | 1.2h | 54.91 | 王晨 | 1.2人时 |
| 219 | 6.5.2 | 6.5.2 验证损坏备份、回退与恢复一致性 | 0.5d | 2026-12-03 14:00 | 2026-12-03 18:00 | 218 | 0.5d |  | start no earlier than 2026-12-03 14:00 |  | 王晨 [37.5%] | 1.5h | 68.64 | 王晨 | 1.5人时 |
| 220 | 6.6 | **6.6 缺陷修复、复测与回归** | 1.5d | 2026-12-03 09:00 | 2026-12-04 13:00 |  | 0d |  |  |  |  | 4h | 183.04 | 刘景浩 | 4人时 |
| 221 | 6.6.1 | 6.6.1 按模块分派缺陷并修复 | 0.5d | 2026-12-03 09:00 | 2026-12-03 13:00 | 216, 213 | 0d |  | start no earlier than 2026-12-03 09:00 |  | 刘景浩 [31.2%]; 王晨 [31.2%] | 2.5h | 114.4 | 王晨、刘景浩 | 2.5人时 |
| 222 | 6.6.2 | 6.6.2 交叉复测原场景与相邻流程 | 1d | 2026-12-03 14:00 | 2026-12-04 13:00 | 221 | 0d |  | start no earlier than 2026-12-03 14:00 |  | 刘景浩 [18.8%] | 1.5h | 68.64 | 刘景浩 | 1.5人时 |
| 223 | 6.7 | **6.7 测试报告与系统内部验收** | 0.5d | 2026-12-04 14:00 | 2026-12-04 18:00 |  | 0d |  |  |  |  | 2.4h | 109.82 | 王晨、刘景浩 | 2.4人时 |
| 224 | 6.7.1 | 6.7.1 双方确认测试结论与交付限制 | 0.5d | 2026-12-04 14:00 | 2026-12-04 18:00 | 222, 219 | 0d |  | start no earlier than 2026-12-04 14:00 | 2026-12-04 18:00 | 王晨 [30%]; 刘景浩 [30%] | 2.4h | 109.82 | 王晨、刘景浩 | 2.4人时 |
| 225 | 6.8 | **6.8 测试报告复核与提交准备** | 2d | 2026-12-07 09:00 | 2026-12-08 18:00 |  | 0d |  |  |  |  | 2.7h | 123.55 | 王晨 | 2.7人时 |
| 226 | 6.8.1 | 6.8.1 复核测试报告与证据链 | 1d | 2026-12-07 09:00 | 2026-12-07 18:00 | 224 | 0d |  | start no earlier than 2026-12-07 09:00 |  | 王晨 [15%] | 1.2h | 54.91 | 王晨 | 1.2人时 |
| 227 | 6.8.2 | 6.8.2 整理课堂测试汇报和已有修订 | 1d | 2026-12-08 09:00 | 2026-12-08 18:00 | 226 | 0d |  | start no earlier than 2026-12-08 09:00 | 2026-12-08 18:00 | 王晨 [18.8%] | 1.5h | 68.64 | 王晨 | 1.5人时 |
| 228 | 7 | **7 部署与维护** | 7d | 2026-12-09 09:00 | 2026-12-17 18:00 |  | 0d |  |  |  |  | 15h | 686.4 | 按下级分配 | 15人时 |
| 229 | 7.1 | **7.1 安装包、用户与维护说明** | 2d | 2026-12-09 09:00 | 2026-12-10 18:00 |  | 0d |  |  |  |  | 3h | 137.28 | 王晨 | 3人时 |
| 230 | 7.1.1 | 7.1.1 整理安装、用户及管理操作说明 | 1d | 2026-12-09 09:00 | 2026-12-09 18:00 | 227 | 0d |  | start no earlier than 2026-12-09 09:00 |  | 王晨 [18.8%] | 1.5h | 68.64 | 王晨 | 1.5人时 |
| 231 | 7.1.2 | 7.1.2 整理运维、恢复与故障维护规程 | 1d | 2026-12-10 09:00 | 2026-12-10 18:00 | 230 | 0d |  | start no earlier than 2026-12-10 09:00 | 2026-12-10 18:00 | 王晨 [18.8%] | 1.5h | 68.64 | 王晨 | 1.5人时 |

Notes:
- 208: 任务负责人：王晨；计划人时：2.7；200用户2000文章5000评论；30并发运行10分钟；读P95≤1秒、写≤2秒、非预期错误率<1%为计划目标
- 209: 任务负责人：王晨；计划人时：1.2；200用户2000文章5000评论；30并发运行10分钟；读P95≤1秒、写≤2秒、非预期错误率<1%为计划目标
- 210: 任务负责人：王晨；计划人时：1.5；200用户2000文章5000评论；30并发运行10分钟；读P95≤1秒、写≤2秒、非预期错误率<1%为计划目标
- 211: 任务负责人：王晨；计划人时：2.7；10/30/50/100并发各2分钟用于探测；100不代表承诺容量；降载10并发2分钟内恢复；10并发运行30分钟
- 212: 任务负责人：王晨；计划人时：1.2；10/30/50/100并发各2分钟用于探测；100不代表承诺容量；降载10并发2分钟内恢复；10并发运行30分钟
- 213: 任务负责人：王晨；计划人时：1.5；10/30/50/100并发各2分钟用于探测；100不代表承诺容量；降载10并发2分钟内恢复；10并发运行30分钟
- 214: 任务负责人：刘景浩；计划人时：2.7；跨角色直接API被拒；敏感材料不泄漏；网页与开发者工具核心流程一致；设备条件及限制写清
- 215: 任务负责人：刘景浩；计划人时：1.2；跨角色直接API被拒；敏感材料不泄漏；网页与开发者工具核心流程一致；设备条件及限制写清
- 216: 任务负责人：刘景浩；计划人时：1.5；跨角色直接API被拒；敏感材料不泄漏；网页与开发者工具核心流程一致；设备条件及限制写清
- 217: 任务负责人：王晨；计划人时：2.7；状态操作真实执行；数据库与图片一致；损坏备份被拒；失败不静默损坏当前数据
- 218: 任务负责人：王晨；计划人时：1.2；状态操作真实执行；数据库与图片一致；损坏备份被拒；失败不静默损坏当前数据
- 219: 任务负责人：王晨；计划人时：1.5；状态操作真实执行；数据库与图片一致；损坏备份被拒；失败不静默损坏当前数据
- 220: 任务负责人：刘景浩；计划人时：4.0；刘景浩统筹；王晨修复后端移动激励；刘景浩修复网页社区运维；阻塞及严重缺陷关闭
- 221: 任务负责人：王晨、刘景浩；计划人时：2.5；刘景浩统筹；王晨修复后端移动激励；刘景浩修复网页社区运维；阻塞及严重缺陷关闭
- 222: 任务负责人：刘景浩；计划人时：1.5；刘景浩统筹；王晨修复后端移动激励；刘景浩修复网页社区运维；阻塞及严重缺陷关闭
- 223: 任务负责人：王晨、刘景浩；计划人时：2.4；实际数据与计划目标分开；结论可追溯到版本、环境与证据；12月6日提交包齐全
- 224: 任务负责人：王晨、刘景浩；计划人时：2.4；实际数据与计划目标分开；结论可追溯到版本、环境与证据；12月6日提交包齐全
- 225: 任务负责人：王晨；计划人时：2.7；12月6日提交基线保留；后续复核作为修订记录；不把新增意见倒写到已提交版本
- 226: 任务负责人：王晨；计划人时：1.2；12月6日提交基线保留；后续复核作为修订记录；不把新增意见倒写到已提交版本
- 227: 任务负责人：王晨；计划人时：1.5；12月6日提交基线保留；后续复核作为修订记录；不把新增意见倒写到已提交版本
- 228: 任务负责人：按下级分配；计划人时：15.0；汇总不重复计费
- 229: 任务负责人：王晨；计划人时：3.0；指南包括版本、目录、冷启动、四类操作影响、离机备份和已知限制；对应同一安装包
- 230: 任务负责人：王晨；计划人时：1.5；指南包括版本、目录、冷启动、四类操作影响、离机备份和已知限制；对应同一安装包
- 231: 任务负责人：王晨；计划人时：1.5；指南包括版本、目录、冷启动、四类操作影响、离机备份和已知限制；对应同一安装包

| ID | WBS | Task | Duration | Start | Finish | Predecessors | Total slack | Constraint | Deadline | Resources | Work | Cost | Text1 | Text2 |
| --- | --- | --- | --- | --- | --- | --- | --- | --- | --- | --- | --- | --- | --- | --- |
| 232 | 7.2 | **7.2 干净环境启动与课堂演示** | 1d | 2026-12-11 09:00 | 2026-12-11 18:00 |  | 0d |  |  |  | 3h | 137.28 | 王晨 | 3人时 |
| 233 | 7.2.1 | 7.2.1 在干净配置核对冷启动 | 0.5d | 2026-12-11 09:00 | 2026-12-11 13:00 | 231 | 0d | start no earlier than 2026-12-11 09:00 |  | 王晨 [37.5%] | 1.5h | 68.64 | 王晨 | 1.5人时 |
| 234 | 7.2.2 | 7.2.2 核对演示数据、认证与外网失败回退 | 0.5d | 2026-12-11 14:00 | 2026-12-11 18:00 | 233 | 0d | start no earlier than 2026-12-11 14:00 | 2026-12-11 18:00 | 王晨 [37.5%] | 1.5h | 68.64 | 王晨 | 1.5人时 |
| 235 | 7.3 | **7.3 维护申请与变更演练** | 1d | 2026-12-14 09:00 | 2026-12-14 18:00 |  | 0d |  |  |  | 3h | 137.28 | 刘景浩 | 3人时 |
| 236 | 7.3.1 | 7.3.1 登记维护申请和影响分析 | 0.5d | 2026-12-14 09:00 | 2026-12-14 13:00 | 234 | 0d | start no earlier than 2026-12-14 09:00 |  | 刘景浩 [37.5%] | 1.5h | 68.64 | 刘景浩 | 1.5人时 |
| 237 | 7.3.2 | 7.3.2 执行修改回退及回归演练 | 0.5d | 2026-12-14 14:00 | 2026-12-14 18:00 | 236 | 0d | start no earlier than 2026-12-14 14:00 |  | 刘景浩 [37.5%] | 1.5h | 68.64 | 刘景浩 | 1.5人时 |
| 238 | 7.4 | **7.4 运维交接与反馈整改** | 1d | 2026-12-15 09:00 | 2026-12-15 18:00 |  | 0d |  |  |  | 3h | 137.28 | 王晨 | 3人时 |
| 239 | 7.4.1 | 7.4.1 核对备份、配置与维护资料 | 0.5d | 2026-12-15 09:00 | 2026-12-15 13:00 | 237 | 0d | start no earlier than 2026-12-15 09:00 |  | 王晨 [37.5%] | 1.5h | 68.64 | 王晨 | 1.5人时 |
| 240 | 7.4.2 | 7.4.2 双方练习操作并确认交接 | 0.5d | 2026-12-15 14:00 | 2026-12-15 18:00 | 239 | 0d | start no earlier than 2026-12-15 14:00 | 2026-12-15 18:00 | 王晨 [37.5%] | 1.5h | 68.64 | 王晨 | 1.5人时 |
| 241 | 7.5 | **7.5 课堂测试评审意见处理** | 1d | 2026-12-17 09:00 | 2026-12-17 18:00 |  | 0d |  |  |  | 3h | 137.28 | 刘景浩 | 3人时 |
| 242 | 7.5.1 | 7.5.1 登记12月16日测试评审意见 | 0.5d | 2026-12-17 09:00 | 2026-12-17 13:00 | 227 | 0d | start no earlier than 2026-12-17 09:00 |  | 刘景浩 [37.5%] | 1.5h | 68.64 | 刘景浩 | 1.5人时 |
| 243 | 7.5.2 | 7.5.2 修订报告及相关实现用例 | 0.5d | 2026-12-17 14:00 | 2026-12-17 18:00 | 242 | 0d | start no earlier than 2026-12-17 14:00 |  | 刘景浩 [37.5%] | 1.5h | 68.64 | 刘景浩 | 1.5人时 |
| 244 | 8 | **8 总结与收尾** | 13d | 2026-12-18 09:00 | 2027-01-06 18:00 |  | 0d |  |  |  | 16.8h | 768.77 | 按下级分配 | 16.8人时 |
| 245 | 8.1 | **8.1 项目总结与计划偏差分析** | 2d | 2026-12-18 09:00 | 2026-12-21 18:00 |  | 0d |  |  |  | 3.6h | 164.74 | 王晨、刘景浩 | 3.6人时 |
| 246 | 8.1.1 | 8.1.1 共同核对计划实际与阶段成果 | 1d | 2026-12-18 09:00 | 2026-12-18 18:00 | 240, 243 | 0d | start no earlier than 2026-12-18 09:00 |  | 王晨 [11.2%]; 刘景浩 [11.2%] | 1.8h | 82.37 | 王晨、刘景浩 | 1.8人时 |
| 247 | 8.1.2 | 8.1.2 共同总结偏差风险和协作贡献 | 1d | 2026-12-21 09:00 | 2026-12-21 18:00 | 246 | 0d | start no earlier than 2026-12-21 09:00 |  | 王晨 [11.2%]; 刘景浩 [11.2%] | 1.8h | 82.37 | 王晨、刘景浩 | 1.8人时 |
| 248 | 8.2 | **8.2 总评材料与详细计划附录** | 2d | 2026-12-22 09:00 | 2026-12-23 18:00 |  | 0d |  |  |  | 3h | 137.28 | 王晨 | 3人时 |
| 249 | 8.2.1 | 8.2.1 整理总评PPT资料和详细周计划 | 1d | 2026-12-22 09:00 | 2026-12-22 18:00 | 247 | 0d | start no earlier than 2026-12-22 09:00 |  | 王晨 [18.8%] | 1.5h | 68.64 | 王晨 | 1.5人时 |
| 250 | 8.2.2 | 8.2.2 核对引用、图表与交付目录 | 1d | 2026-12-23 09:00 | 2026-12-23 18:00 | 249 | 0d | start no earlier than 2026-12-23 09:00 |  | 王晨 [18.8%] | 1.5h | 68.64 | 王晨 | 1.5人时 |
| 251 | 8.3 | **8.3 最终验收与汇报演练** | 1d | 2026-12-24 09:00 | 2026-12-24 18:00 |  | 0d |  |  |  | 3.6h | 164.74 | 王晨、刘景浩 | 3.6人时 |
| 252 | 8.3.1 | 8.3.1 共同执行交付清单核查 | 0.5d | 2026-12-24 09:00 | 2026-12-24 13:00 | 250 | 0d | start no earlier than 2026-12-24 09:00 |  | 王晨 [22.5%]; 刘景浩 [22.5%] | 1.8h | 82.37 | 王晨、刘景浩 | 1.8人时 |
| 253 | 8.3.2 | 8.3.2 共同预演并确认提交版本 | 0.5d | 2026-12-24 14:00 | 2026-12-24 18:00 | 252 | 0d | start no earlier than 2026-12-24 14:00 | 2026-12-24 18:00 | 王晨 [22.5%]; 刘景浩 [22.5%] | 1.8h | 82.37 | 王晨、刘景浩 | 1.8人时 |
| 254 | 8.4 | **8.4 总评反馈处理与归档** | 2d | 2026-12-31 09:00 | 2027-01-04 18:00 |  | 0d |  |  |  | 3h | 137.28 | 王晨 | 3人时 |
| 255 | 8.4.1 | 8.4.1 处理总评意见并准备提交基线 | 1d | 2026-12-31 09:00 | 2026-12-31 18:00 | 253 | 0d | start no earlier than 2026-12-31 09:00 |  | 王晨 [18.8%] | 1.5h | 68.64 | 王晨 | 1.5人时 |
| 256 | 8.4.2 | 8.4.2 核对提交后尾项与最终归档 | 1d | 2027-01-04 09:00 | 2027-01-04 18:00 | 255 | 0d | start no earlier than 2027-01-04 09:00 | 2027-01-04 18:00 | 王晨 [18.8%] | 1.5h | 68.64 | 王晨 | 1.5人时 |

Notes:
- 232: 任务负责人：王晨；计划人时：3.0；按指南可复现；预认证演示与真实邮箱验证分开；测试账号不展示凭据
- 233: 任务负责人：王晨；计划人时：1.5；按指南可复现；预认证演示与真实邮箱验证分开；测试账号不展示凭据
- 234: 任务负责人：王晨；计划人时：1.5；按指南可复现；预认证演示与真实邮箱验证分开；测试账号不展示凭据
- 235: 任务负责人：刘景浩；计划人时：3.0；申请、评估、实施、回归与版本归档闭环；不为演练制造真实用户事故
- 236: 任务负责人：刘景浩；计划人时：1.5；申请、评估、实施、回归与版本归档闭环；不为演练制造真实用户事故
- 237: 任务负责人：刘景浩；计划人时：1.5；申请、评估、实施、回归与版本归档闭环；不为演练制造真实用户事故
- 238: 任务负责人：王晨；计划人时：3.0；双方能操作固定运维任务；离机副本有位置和完整性记录；私密配置独立交接
- 239: 任务负责人：王晨；计划人时：1.5；双方能操作固定运维任务；离机副本有位置和完整性记录；私密配置独立交接
- 240: 任务负责人：王晨；计划人时：1.5；双方能操作固定运维任务；离机副本有位置和完整性记录；私密配置独立交接
- 241: 任务负责人：刘景浩；计划人时：3.0；逐项处理、复核和记录；未解决问题明确责任及期限；同版本更新交付包
- 242: 任务负责人：刘景浩；计划人时：1.5；逐项处理、复核和记录；未解决问题明确责任及期限；同版本更新交付包
- 243: 任务负责人：刘景浩；计划人时：1.5；逐项处理、复核和记录；未解决问题明确责任及期限；同版本更新交付包
- 244: 任务负责人：按下级分配；计划人时：16.8；汇总不重复计费
- 245: 任务负责人：王晨、刘景浩；计划人时：3.6；以工作包、提交和问题单说明事实；管理、开发、文档均计入成果；不虚构数字
- 246: 任务负责人：王晨、刘景浩；计划人时：1.8；以工作包、提交和问题单说明事实；管理、开发、文档均计入成果；不虚构数字
- 247: 任务负责人：王晨、刘景浩；计划人时：1.8；以工作包、提交和问题单说明事实；管理、开发、文档均计入成果；不虚构数字
- 248: 任务负责人：王晨；计划人时：3.0；PPT由豆包制作；正文与附录范围分工日期一致；无旧范围截图与凭据
- 249: 任务负责人：王晨；计划人时：1.5；PPT由豆包制作；正文与附录范围分工日期一致；无旧范围截图与凭据
- 250: 任务负责人：王晨；计划人时：1.5；PPT由豆包制作；正文与附录范围分工日期一致；无旧范围截图与凭据
- 251: 任务负责人：王晨、刘景浩；计划人时：3.6；源码、脚本、包、文档、测试与图表同版本；12月27日提交、12月30日汇报
- 252: 任务负责人：王晨、刘景浩；计划人时：1.8；源码、脚本、包、文档、测试与图表同版本；12月27日提交、12月30日汇报
- 253: 任务负责人：王晨、刘景浩；计划人时：1.8；源码、脚本、包、文档、测试与图表同版本；12月27日提交、12月30日汇报
- 254: 任务负责人：王晨；计划人时：3.0；12月31日准备1月3日提交基线；1月4日核对尾项并形成补充记录；不宣称1月3日已完成1月4日任务
- 255: 任务负责人：王晨；计划人时：1.5；12月31日准备1月3日提交基线；1月4日核对尾项并形成补充记录；不宣称1月3日已完成1月4日任务
- 256: 任务负责人：王晨；计划人时：1.5；12月31日准备1月3日提交基线；1月4日核对尾项并形成补充记录；不宣称1月3日已完成1月4日任务

| ID | WBS | Task | Duration | Start | Finish | Predecessors | Total slack | Constraint | Deadline | Resources | Work | Cost | Text1 | Text2 |
| --- | --- | --- | --- | --- | --- | --- | --- | --- | --- | --- | --- | --- | --- | --- |
| 257 | 8.5 | **8.5 课程收尾与交付确认** | 1d | 2027-01-06 09:00 | 2027-01-06 18:00 |  | 0d |  |  |  | 3.6h | 164.74 | 王晨、刘景浩 | 3.6人时 |
| 258 | 8.5.1 | 8.5.1 共同核对课程收尾材料 | 0.5d | 2027-01-06 09:00 | 2027-01-06 13:00 | 256 | 0d | start no earlier than 2027-01-06 09:00 |  | 王晨 [22.5%]; 刘景浩 [22.5%] | 1.8h | 82.37 | 王晨、刘景浩 | 1.8人时 |
| 259 | 8.5.2 | 8.5.2 共同确认交付与后续维护边界 | 0.5d | 2027-01-06 14:00 | 2027-01-06 18:00 | 258 | 0d | start no earlier than 2027-01-06 14:00 | 2027-01-06 18:00 | 王晨 [22.5%]; 刘景浩 [22.5%] | 1.8h | 82.37 | 王晨、刘景浩 | 1.8人时 |
| 260 | M | **M 持续项目管理与交叉复核** | 64d | 2026-10-08 09:00 | 2027-01-06 18:00 |  | 0d |  |  |  | 27.65h | 1,265.26 | 按下级分配 | 27.65人时 |
| 261 | M01 | M01 周进度风险与评审提交管理 | 2d | 2026-10-08 09:00 | 2026-10-09 18:00 |  | 62d | start no earlier than 2026-10-08 09:00 |  | 王晨 [3.8%]; 刘景浩 [1.6%] | 0.85h | 38.9 | 王晨 | 0.85人时 |
| 262 | M02 | M02 周进度风险与评审提交管理 | 5d | 2026-10-12 09:00 | 2026-10-16 18:00 |  | 57d | start no earlier than 2026-10-12 09:00 |  | 王晨 [1.5%]; 刘景浩 [0.6%] | 0.85h | 38.9 | 王晨 | 0.85人时 |
| 263 | M03 | M03 周进度风险与评审提交管理 | 5d | 2026-10-19 09:00 | 2026-10-23 18:00 |  | 52d | start no earlier than 2026-10-19 09:00 |  | 王晨 [1.5%]; 刘景浩 [0.6%] | 0.85h | 38.9 | 王晨 | 0.85人时 |
| 264 | M04 | M04 周进度风险与评审提交管理 | 5d | 2026-10-26 09:00 | 2026-10-30 18:00 |  | 47d | start no earlier than 2026-10-26 09:00 |  | 王晨 [1.5%]; 刘景浩 [0.6%] | 0.85h | 38.9 | 王晨 | 0.85人时 |
| 265 | M05 | M05 周进度风险与评审提交管理 | 5d | 2026-11-02 09:00 | 2026-11-06 18:00 |  | 42d | start no earlier than 2026-11-02 09:00 |  | 王晨 [1.5%]; 刘景浩 [0.6%] | 0.85h | 38.9 | 王晨 | 0.85人时 |
| 266 | M06 | M06 周进度风险与评审提交管理 | 5d | 2026-11-09 09:00 | 2026-11-13 18:00 |  | 37d | start no earlier than 2026-11-09 09:00 |  | 王晨 [1.5%]; 刘景浩 [0.6%] | 0.85h | 38.9 | 王晨 | 0.85人时 |
| 267 | M07 | M07 周进度风险与评审提交管理 | 5d | 2026-11-16 09:00 | 2026-11-20 18:00 |  | 32d | start no earlier than 2026-11-16 09:00 |  | 王晨 [1.5%]; 刘景浩 [0.6%] | 0.85h | 38.9 | 王晨 | 0.85人时 |
| 268 | M08 | M08 周进度风险与评审提交管理 | 5d | 2026-11-23 09:00 | 2026-11-27 18:00 |  | 27d | start no earlier than 2026-11-23 09:00 |  | 王晨 [1.5%]; 刘景浩 [0.6%] | 0.85h | 38.9 | 王晨 | 0.85人时 |
| 269 | M09 | M09 周进度风险与评审提交管理 | 5d | 2026-11-30 09:00 | 2026-12-04 18:00 |  | 22d | start no earlier than 2026-11-30 09:00 |  | 王晨 [1.5%]; 刘景浩 [0.6%] | 0.85h | 38.9 | 王晨 | 0.85人时 |
| 270 | M10 | M10 周进度风险与评审提交管理 | 5d | 2026-12-07 09:00 | 2026-12-11 18:00 |  | 17d | start no earlier than 2026-12-07 09:00 |  | 王晨 [1.5%]; 刘景浩 [0.6%] | 0.85h | 38.9 | 王晨 | 0.85人时 |
| 271 | M11 | M11 周进度风险与评审提交管理 | 5d | 2026-12-14 09:00 | 2026-12-18 18:00 |  | 12d | start no earlier than 2026-12-14 09:00 |  | 王晨 [1.5%]; 刘景浩 [0.6%] | 0.85h | 38.9 | 王晨 | 0.85人时 |
| 272 | M12 | M12 周进度风险与评审提交管理 | 5d | 2026-12-21 09:00 | 2026-12-25 18:00 |  | 7d | start no earlier than 2026-12-21 09:00 |  | 王晨 [1.5%]; 刘景浩 [0.6%] | 0.85h | 38.9 | 王晨 | 0.85人时 |
| 273 | M13 | M13 周进度风险与评审提交管理 | 4d | 2026-12-28 09:00 | 2026-12-31 18:00 |  | 3d | start no earlier than 2026-12-28 09:00 |  | 王晨 [1.9%]; 刘景浩 [0.8%] | 0.85h | 38.9 | 王晨 | 0.85人时 |
| 274 | M14 | M14 周进度风险与评审提交管理 | 3d | 2027-01-04 09:00 | 2027-01-06 18:00 |  | 0d | start no earlier than 2027-01-04 09:00 |  | 王晨 [2.5%]; 刘景浩 [1%] | 0.85h | 38.9 | 王晨 | 0.85人时 |
| 275 | R2.1 | R2.1 复核与交接 关键技术与工具可行性验证 | 3d | 2026-10-08 09:00 | 2026-10-12 18:00 |  | 61d | start no earlier than 2026-10-08 09:00 |  | 刘景浩 [1.9%] | 0.45h | 20.59 | 刘景浩 | 0.45人时 |
| 276 | R2.2 | R2.2 复核与交接 经济、操作及内容供给分析 | 2d | 2026-10-12 09:00 | 2026-10-13 18:00 |  | 60d | start no earlier than 2026-10-12 09:00 |  | 王晨 [2.8%] | 0.45h | 20.59 | 王晨 | 0.45人时 |
| 277 | R3.2 | R3.2 复核与交接 功能、数据与非功能需求 | 2d | 2026-10-20 09:00 | 2026-10-21 18:00 |  | 54d | start no earlier than 2026-10-20 09:00 |  | 刘景浩 [2.8%] | 0.45h | 20.59 | 刘景浩 | 0.45人时 |
| 278 | R3.3 | R3.3 复核与交接 双端原型与场景核对 | 2d | 2026-10-20 09:00 | 2026-10-21 18:00 |  | 54d | start no earlier than 2026-10-20 09:00 |  | 王晨 [2.8%] | 0.45h | 20.59 | 王晨 | 0.45人时 |
| 279 | R3.5 | R3.5 复核与交接 需求课堂评审反馈处理 | 0.5d | 2026-11-04 14:00 | 2026-11-04 18:00 |  | 44d | start no earlier than 2026-11-04 14:00 |  | 王晨 [11.2%] | 0.45h | 20.59 | 王晨 | 0.45人时 |
| 280 | R4.1 | R4.1 复核与交接 系统架构、接口与数据库设计 | 3d | 2026-10-26 09:00 | 2026-10-28 18:00 |  | 49d | start no earlier than 2026-10-26 09:00 |  | 刘景浩 [1.9%] | 0.45h | 20.59 | 刘景浩 | 0.45人时 |
| 281 | R4.2 | R4.2 复核与交接 认证、内容、激励与治理设计 | 2d | 2026-10-29 09:00 | 2026-10-30 18:00 |  | 47d | start no earlier than 2026-10-29 09:00 |  | 刘景浩 [2.8%] | 0.45h | 20.59 | 刘景浩 | 0.45人时 |
| 282 | R4.3 | R4.3 复核与交接 双端浏览与创作详细设计 | 3d | 2026-10-29 09:00 | 2026-11-02 18:00 |  | 46d | start no earlier than 2026-10-29 09:00 |  | 王晨 [1.9%] | 0.45h | 20.59 | 王晨 | 0.45人时 |
| 283 | R4.4 | R4.4 复核与交接 部署、备份与恢复详细设计 | 2d | 2026-11-02 09:00 | 2026-11-03 18:00 |  | 45d | start no earlier than 2026-11-02 09:00 |  | 刘景浩 [2.8%] | 0.45h | 20.59 | 刘景浩 | 0.45人时 |
| 284 | R4.6 | R4.6 复核与交接 测试用例设计与数据准备 | 1d | 2026-11-03 09:00 | 2026-11-03 18:00 |  | 45d | start no earlier than 2026-11-03 09:00 |  | 王晨 [5.6%] | 0.45h | 20.59 | 王晨 | 0.45人时 |
| 285 | R5.1 | R5.1 复核与交接 项目骨架、配置与接口约定 | 1d | 2026-11-06 09:00 | 2026-11-06 18:00 |  | 42d | start no earlier than 2026-11-06 09:00 |  | 刘景浩 [5.6%] | 0.45h | 20.59 | 刘景浩 | 0.45人时 |
| 286 | R5.2 | R5.2 复核与交接 登录、邮箱与材料认证 | 2d | 2026-11-09 09:00 | 2026-11-10 18:00 |  | 40d | start no earlier than 2026-11-09 09:00 |  | 刘景浩 [2.8%] | 0.45h | 20.59 | 刘景浩 | 0.45人时 |
| 287 | R5.3 | R5.3 复核与交接 文章存储、岗位检索与筛选接口 | 3d | 2026-11-11 09:00 | 2026-11-13 18:00 |  | 37d | start no earlier than 2026-11-11 09:00 |  | 刘景浩 [1.9%] | 0.45h | 20.59 | 刘景浩 | 0.45人时 |
| 288 | R5.4 | R5.4 复核与交接 小程序与网页阅读页面 | 3d | 2026-11-06 09:00 | 2026-11-10 18:00 |  | 40d | start no earlier than 2026-11-06 09:00 |  | 王晨 [1.9%] | 0.45h | 20.59 | 王晨 | 0.45人时 |
| 289 | R5.5 | R5.5 复核与交接 网页Markdown创作与草稿 | 3d | 2026-11-11 09:00 | 2026-11-13 18:00 |  | 37d | start no earlier than 2026-11-11 09:00 |  | 王晨 [1.9%] | 0.45h | 20.59 | 王晨 | 0.45人时 |
| 290 | R5.6 | R5.6 复核与交接 小程序文字与图片创作 | 2d | 2026-11-16 09:00 | 2026-11-17 18:00 |  | 35d | start no earlier than 2026-11-16 09:00 |  | 刘景浩 [2.8%] | 0.45h | 20.59 | 刘景浩 | 0.45人时 |
| 291 | R5.7 | R5.7 复核与交接 双端草稿、发布与文章管理 | 2d | 2026-11-18 09:00 | 2026-11-19 18:00 |  | 33d | start no earlier than 2026-11-18 09:00 |  | 刘景浩 [2.8%] | 0.45h | 20.59 | 刘景浩 | 0.45人时 |
| 292 | R5.8 | R5.8 复核与交接 评论、点赞、投币、收藏与荣誉 | 3d | 2026-11-20 09:00 | 2026-11-24 18:00 |  | 30d | start no earlier than 2026-11-20 09:00 |  | 刘景浩 [1.9%] | 0.45h | 20.59 | 刘景浩 | 0.45人时 |
| 293 | R5.9 | R5.9 复核与交接 社区审核、反馈与举报网页 | 3d | 2026-11-16 09:00 | 2026-11-18 18:00 |  | 34d | start no earlier than 2026-11-16 09:00 |  | 王晨 [1.9%] | 0.45h | 20.59 | 王晨 | 0.45人时 |
| 294 | R5.10 | R5.10 复核与交接 独立运维执行与备份服务 | 3d | 2026-11-19 09:00 | 2026-11-23 18:00 |  | 31d | start no earlier than 2026-11-19 09:00 |  | 王晨 [1.9%] | 0.45h | 20.59 | 王晨 | 0.45人时 |
| 295 | R5.11 | R5.11 复核与交接 运维网页、状态与操作记录 | 2d | 2026-11-24 09:00 | 2026-11-25 18:00 |  | 29d | start no earlier than 2026-11-24 09:00 |  | 王晨 [2.8%] | 0.45h | 20.59 | 王晨 | 0.45人时 |
| 296 | R6.1 | R6.1 复核与交接 功能、接口与集成测试 | 2d | 2026-11-30 09:00 | 2026-12-01 18:00 |  | 25d | start no earlier than 2026-11-30 09:00 |  | 王晨 [2.8%] | 0.45h | 20.59 | 王晨 | 0.45人时 |
| 297 | R6.2 | R6.2 复核与交接 性能与负载测试 | 2d | 2026-11-30 09:00 | 2026-12-01 18:00 |  | 25d | start no earlier than 2026-11-30 09:00 |  | 刘景浩 [2.8%] | 0.45h | 20.59 | 刘景浩 | 0.45人时 |
| 298 | R6.3 | R6.3 复核与交接 压力与稳定性测试 | 1d | 2026-12-02 09:00 | 2026-12-02 18:00 |  | 24d | start no earlier than 2026-12-02 09:00 |  | 刘景浩 [5.6%] | 0.45h | 20.59 | 刘景浩 | 0.45人时 |
| 299 | R6.4 | R6.4 复核与交接 安全权限与双端兼容测试 | 1d | 2026-12-02 09:00 | 2026-12-02 18:00 |  | 24d | start no earlier than 2026-12-02 09:00 |  | 王晨 [5.6%] | 0.45h | 20.59 | 王晨 | 0.45人时 |
| 300 | R6.5 | R6.5 复核与交接 部署、故障与备份恢复验证 | 1d | 2026-12-03 09:00 | 2026-12-03 18:00 |  | 23d | start no earlier than 2026-12-03 09:00 |  | 刘景浩 [5.6%] | 0.45h | 20.59 | 刘景浩 | 0.45人时 |
| 301 | R6.6 | R6.6 复核与交接 缺陷修复、复测与回归 | 1.5d | 2026-12-03 09:00 | 2026-12-04 13:00 |  | 22.5d | start no earlier than 2026-12-03 09:00 |  | 王晨 [3.8%] | 0.45h | 20.59 | 王晨 | 0.45人时 |
| 302 | R6.8 | R6.8 复核与交接 测试报告复核与提交准备 | 2d | 2026-12-07 09:00 | 2026-12-08 18:00 |  | 20d | start no earlier than 2026-12-07 09:00 |  | 刘景浩 [2.8%] | 0.45h | 20.59 | 刘景浩 | 0.45人时 |
| 303 | R7.1 | R7.1 复核与交接 安装包、用户与维护说明 | 2d | 2026-12-09 09:00 | 2026-12-10 18:00 |  | 18d | start no earlier than 2026-12-09 09:00 |  | 刘景浩 [2.8%] | 0.45h | 20.59 | 刘景浩 | 0.45人时 |
| 304 | R7.2 | R7.2 复核与交接 干净环境启动与课堂演示 | 1d | 2026-12-11 09:00 | 2026-12-11 18:00 |  | 17d | start no earlier than 2026-12-11 09:00 |  | 刘景浩 [5.6%] | 0.45h | 20.59 | 刘景浩 | 0.45人时 |
| 305 | R7.3 | R7.3 复核与交接 维护申请与变更演练 | 1d | 2026-12-14 09:00 | 2026-12-14 18:00 |  | 16d | start no earlier than 2026-12-14 09:00 |  | 王晨 [5.6%] | 0.45h | 20.59 | 王晨 | 0.45人时 |
| 306 | R7.4 | R7.4 复核与交接 运维交接与反馈整改 | 1d | 2026-12-15 09:00 | 2026-12-15 18:00 |  | 15d | start no earlier than 2026-12-15 09:00 |  | 刘景浩 [5.6%] | 0.45h | 20.59 | 刘景浩 | 0.45人时 |
| 307 | R7.5 | R7.5 复核与交接 课堂测试评审意见处理 | 1d | 2026-12-17 09:00 | 2026-12-17 18:00 |  | 13d | start no earlier than 2026-12-17 09:00 |  | 王晨 [5.6%] | 0.45h | 20.59 | 王晨 | 0.45人时 |
| 308 | R8.2 | R8.2 复核与交接 总评材料与详细计划附录 | 2d | 2026-12-22 09:00 | 2026-12-23 18:00 |  | 9d | start no earlier than 2026-12-22 09:00 |  | 刘景浩 [2.8%] | 0.45h | 20.59 | 刘景浩 | 0.45人时 |
| 309 | R8.4 | R8.4 复核与交接 总评反馈处理与归档 | 2d | 2026-12-31 09:00 | 2027-01-04 18:00 |  | 2d | start no earlier than 2026-12-31 09:00 |  | 刘景浩 [2.8%] | 0.45h | 20.59 | 刘景浩 | 0.45人时 |

Notes:
- 257: 任务负责人：王晨、刘景浩；计划人时：3.6；1月6日课程收尾；实际互评由双方确认；后续运维范围另行约定
- 258: 任务负责人：王晨、刘景浩；计划人时：1.8；1月6日课程收尾；实际互评由双方确认；后续运维范围另行约定
- 259: 任务负责人：王晨、刘景浩；计划人时：1.8；1月6日课程收尾；实际互评由双方确认；后续运维范围另行约定
- 260: 任务负责人：按下级分配；计划人时：27.65；汇总不重复计费
- 261: 任务负责人：王晨；计划人时：0.85；检查完成证据、阻塞、下周交接和提交节点；更新风险变更及实际差异；双方确认记录
- 262: 任务负责人：王晨；计划人时：0.85；检查完成证据、阻塞、下周交接和提交节点；更新风险变更及实际差异；双方确认记录
- 263: 任务负责人：王晨；计划人时：0.85；检查完成证据、阻塞、下周交接和提交节点；更新风险变更及实际差异；双方确认记录
- 264: 任务负责人：王晨；计划人时：0.85；检查完成证据、阻塞、下周交接和提交节点；更新风险变更及实际差异；双方确认记录
- 265: 任务负责人：王晨；计划人时：0.85；检查完成证据、阻塞、下周交接和提交节点；更新风险变更及实际差异；双方确认记录
- 266: 任务负责人：王晨；计划人时：0.85；检查完成证据、阻塞、下周交接和提交节点；更新风险变更及实际差异；双方确认记录
- 267: 任务负责人：王晨；计划人时：0.85；检查完成证据、阻塞、下周交接和提交节点；更新风险变更及实际差异；双方确认记录
- 268: 任务负责人：王晨；计划人时：0.85；检查完成证据、阻塞、下周交接和提交节点；更新风险变更及实际差异；双方确认记录
- 269: 任务负责人：王晨；计划人时：0.85；检查完成证据、阻塞、下周交接和提交节点；更新风险变更及实际差异；双方确认记录
- 270: 任务负责人：王晨；计划人时：0.85；检查完成证据、阻塞、下周交接和提交节点；更新风险变更及实际差异；双方确认记录
- 271: 任务负责人：王晨；计划人时：0.85；检查完成证据、阻塞、下周交接和提交节点；更新风险变更及实际差异；双方确认记录
- 272: 任务负责人：王晨；计划人时：0.85；检查完成证据、阻塞、下周交接和提交节点；更新风险变更及实际差异；双方确认记录
- 273: 任务负责人：王晨；计划人时：0.85；检查完成证据、阻塞、下周交接和提交节点；更新风险变更及实际差异；双方确认记录
- 274: 任务负责人：王晨；计划人时：0.85；检查完成证据、阻塞、下周交接和提交节点；更新风险变更及实际差异；双方确认记录
- 275: 任务负责人：刘景浩；计划人时：0.45；真实发信、编译、权限和恢复条件有验证记录；失败说明替代措施
- 276: 任务负责人：王晨；计划人时：0.45；现有资源与新增费用分别列出；演示资料可追溯；不虚构访谈和作者承诺
- 277: 任务负责人：刘景浩；计划人时：0.45；REQ编号关联用例；认证资料、隐私、状态、冲突、币账本与恢复边界可验收
- 278: 任务负责人：王晨；计划人时：0.45；原型覆盖空结果、加载失败、认证提示、草稿保存和运维任务失败
- 279: 任务负责人：王晨；计划人时：0.45；11月4日新意见在课后完成登记与修订；变更有责任人和复核结论
- 280: 任务负责人：刘景浩；计划人时：0.45；共享API、错误响应、版本号、ER和权限边界明确；客户端不直连数据库
- 281: 任务负责人：刘景浩；计划人时：0.45；验证码失效、越权、版本冲突、重复请求、下架及申诉均有处理规则
- 282: 任务负责人：王晨；计划人时：0.45；复杂正文不能被移动端静默覆盖；上传失败保留正文；编辑冲突可识别
- 283: 任务负责人：刘景浩；计划人时：0.45；执行器独立于业务进程；固定目标；任务互斥；恢复前保护现有数据
- 284: 任务负责人：王晨；计划人时：0.45；覆盖五类角色、双端、账本、恢复、性能压力与稳定性；数据不含真实隐私
- 285: 任务负责人：刘景浩；计划人时：0.45；双方按契约独立工作；配置与凭据分离；构建入口可复现
- 286: 任务负责人：刘景浩；计划人时：0.45；验证码错误、过期和发送失败有反馈；认证材料受控；审核有理由与通知
- 287: 任务负责人：刘景浩；计划人时：0.45；草稿不公开；组合检索准确；图片关联正确；错误响应与版本字段符合契约
- 288: 任务负责人：王晨；计划人时：0.45；此时按契约使用模拟数据并明确标注；真实API接入在5.12完成
- 289: 任务负责人：王晨；计划人时：0.45；正文图片保存一致；失败保留内容；危险脚本过滤；复杂正文格式保留
- 290: 任务负责人：刘景浩；计划人时：0.45；手机能完成图文创作；失败图片可逐项重试；不静默覆盖复杂正文
- 291: 任务负责人：刘景浩；计划人时：0.45；更新有版本冲突提示；管理员下架不可由作者自行恢复；删除不误删他人数据
- 292: 任务负责人：刘景浩；计划人时：0.45；未认证不能取得评论主页联系方式；作者关闭联系立即生效；余额不负、不自投、不重复奖励；贡献与消费分开
- 293: 任务负责人：王晨；计划人时：0.45；刘景浩同时负责社区处理API与网页；复用认证契约；一键定位原文评论；理由、通知、限制申诉及审计可追溯
- 294: 任务负责人：王晨；计划人时：0.45；仅受控服务与目录；任务互斥且持久；恢复前备份；数据库与图片一致；业务停机仍可查任务
- 295: 任务负责人：王晨；计划人时：0.45；各动作显示目标与影响并确认；显示运行、成功、失败状态和审计；不提供任意命令输入
- 296: 任务负责人：王晨；计划人时：0.45；阅读认证创作交流管理全链路通过；失败输入、数据断言与缺陷可复现
- 297: 任务负责人：刘景浩；计划人时：0.45；200用户2000文章5000评论；30并发运行10分钟；读P95≤1秒、写≤2秒、非预期错误率<1%为计划目标
- 298: 任务负责人：刘景浩；计划人时：0.45；10/30/50/100并发各2分钟用于探测；100不代表承诺容量；降载10并发2分钟内恢复；10并发运行30分钟
- 299: 任务负责人：王晨；计划人时：0.45；跨角色直接API被拒；敏感材料不泄漏；网页与开发者工具核心流程一致；设备条件及限制写清
- 300: 任务负责人：刘景浩；计划人时：0.45；状态操作真实执行；数据库与图片一致；损坏备份被拒；失败不静默损坏当前数据
- 301: 任务负责人：王晨；计划人时：0.45；刘景浩统筹；王晨修复后端移动激励；刘景浩修复网页社区运维；阻塞及严重缺陷关闭
- 302: 任务负责人：刘景浩；计划人时：0.45；12月6日提交基线保留；后续复核作为修订记录；不把新增意见倒写到已提交版本
- 303: 任务负责人：刘景浩；计划人时：0.45；指南包括版本、目录、冷启动、四类操作影响、离机备份和已知限制；对应同一安装包
- 304: 任务负责人：刘景浩；计划人时：0.45；按指南可复现；预认证演示与真实邮箱验证分开；测试账号不展示凭据
- 305: 任务负责人：王晨；计划人时：0.45；申请、评估、实施、回归与版本归档闭环；不为演练制造真实用户事故
- 306: 任务负责人：刘景浩；计划人时：0.45；双方能操作固定运维任务；离机副本有位置和完整性记录；私密配置独立交接
- 307: 任务负责人：王晨；计划人时：0.45；逐项处理、复核和记录；未解决问题明确责任及期限；同版本更新交付包
- 308: 任务负责人：刘景浩；计划人时：0.45；PPT由豆包制作；正文与附录范围分工日期一致；无旧范围截图与凭据
- 309: 任务负责人：刘景浩；计划人时：0.45；12月31日准备1月3日提交基线；1月4日核对尾项并形成补充记录；不宣称1月3日已完成1月4日任务

| ID | WBS | Task | Type | Duration | Start | Finish | Total slack | Constraint | Text1 | Text2 |
| --- | --- | --- | --- | --- | --- | --- | --- | --- | --- | --- |
| 310 | K | **K 课程里程碑** |  | 59d | 2026-10-14 09:00 | 2027-01-06 09:00 | 1d |  | 按下级分配 | 0人时 |
| 311 | K01 | K01 项目计划课堂评审 | milestone | 0d | 2026-10-14 09:00 | 2026-10-14 09:00 | 60d | start no earlier than 2026-10-14 09:00 | 按下级分配 | 0人时 |
| 312 | K02 | K02 可行性报告课堂节点 | milestone | 0d | 2026-10-21 09:00 | 2026-10-21 09:00 | 55d | start no earlier than 2026-10-21 09:00 | 按下级分配 | 0人时 |
| 313 | K03 | K03 SRS需求课堂评审 | milestone | 0d | 2026-10-28 09:00 | 2026-10-28 09:00 | 50d | start no earlier than 2026-10-28 09:00 | 按下级分配 | 0人时 |
| 314 | K04 | K04 SRS修订与需求复审 | milestone | 0d | 2026-11-04 09:00 | 2026-11-04 09:00 | 45d | start no earlier than 2026-11-04 09:00 | 按下级分配 | 0人时 |
| 315 | K05 | K05 总体设计课堂节点 | milestone | 0d | 2026-11-11 09:00 | 2026-11-11 09:00 | 40d | start no earlier than 2026-11-11 09:00 | 按下级分配 | 0人时 |
| 316 | K06 | K06 详细设计课堂节点 | milestone | 0d | 2026-11-18 09:00 | 2026-11-18 09:00 | 35d | start no earlier than 2026-11-18 09:00 | 按下级分配 | 0人时 |
| 317 | K07 | K07 设计评审与翻转PPT1 | milestone | 0d | 2026-11-25 09:00 | 2026-11-25 09:00 | 30d | start no earlier than 2026-11-25 09:00 | 按下级分配 | 0人时 |
| 318 | K08 | K08 代码用例与翻转PPT2 | milestone | 0d | 2026-12-02 09:00 | 2026-12-02 09:00 | 25d | start no earlier than 2026-12-02 09:00 | 按下级分配 | 0人时 |
| 319 | K09 | K09 系统测试报告课堂节点 | milestone | 0d | 2026-12-09 09:00 | 2026-12-09 09:00 | 20d | start no earlier than 2026-12-09 09:00 | 按下级分配 | 0人时 |
| 320 | K10 | K10 测试报告修订课堂评审 | milestone | 0d | 2026-12-16 09:00 | 2026-12-16 09:00 | 15d | start no earlier than 2026-12-16 09:00 | 按下级分配 | 0人时 |
| 321 | K11 | K11 项目总结与总评PPT | milestone | 0d | 2026-12-30 09:00 | 2026-12-30 09:00 | 5d | start no earlier than 2026-12-30 09:00 | 按下级分配 | 0人时 |
| 322 | K12 | K12 课程收尾与交付确认 | milestone | 0d | 2027-01-06 09:00 | 2027-01-06 09:00 | 1d | start no earlier than 2027-01-06 09:00 | 按下级分配 | 0人时 |

Notes:
- 310: 任务负责人：按下级分配；计划人时：0.0；汇总不重复计费
- 311: 任务负责人：按下级分配；计划人时：0.0；按课程进度提交并登记当堂意见
- 312: 任务负责人：按下级分配；计划人时：0.0；按课程进度提交并登记当堂意见
- 313: 任务负责人：按下级分配；计划人时：0.0；按课程进度提交并登记当堂意见
- 314: 任务负责人：按下级分配；计划人时：0.0；按课程进度提交并登记当堂意见
- 315: 任务负责人：按下级分配；计划人时：0.0；按课程进度提交并登记当堂意见
- 316: 任务负责人：按下级分配；计划人时：0.0；按课程进度提交并登记当堂意见
- 317: 任务负责人：按下级分配；计划人时：0.0；按课程进度提交并登记当堂意见
- 318: 任务负责人：按下级分配；计划人时：0.0；按课程进度提交并登记当堂意见
- 319: 任务负责人：按下级分配；计划人时：0.0；按课程进度提交并登记当堂意见
- 320: 任务负责人：按下级分配；计划人时：0.0；按课程进度提交并登记当堂意见
- 321: 任务负责人：按下级分配；计划人时：0.0；按课程进度提交并登记当堂意见
- 322: 任务负责人：按下级分配；计划人时：0.0；按课程进度提交并登记当堂意见
